# PROYECTO BODEGA INDUSTRIAL

Schedule from Primavera P6, 2026-09-07 to 2027-03-03, data date 2026-09-07, costs in CLPP, A marks actual dates.

## Calendars

- 5d Semana Laboral 40hrs MyS: Mon-Thu 08:00-13:00, 14:00-18:00; Fri 08:00-13:00; Sat-Sun off.

## Resources

| Resource | Group |
| --- | --- |
| Cuadrilla Topografía - Levantamiento topográfico del terreno | labor |
| Ingeniero Geotécnico - Estudio de mecánica de suelos (EMS) | labor |
| Suministro: Estudio de mecánica de suelos (EMS) | material |
| Arquitecto Proyectista - Planos de arquitectura (plantas, cortes) | labor |
| Suministro: Planos de arquitectura (plantas, cortes) | material |
| Ingeniero Calculista - Ingeniería básica estructural | labor |
| Suministro: Ingeniería básica estructural | material |
| Ingeniero Calculista - Cálculo estructural galpón metálico | labor |
| Suministro: Cálculo estructural galpón metálico | material |
| Ingeniero Calculista - Memoria de cálculo fundaciones | labor |
| Suministro: Memoria de cálculo fundaciones | material |
| Proyectista Estructural - Planos de estructuras metálicas | labor |
| Suministro: Planos de estructuras metálicas | material |
| Proyectista Eléctrico - Planos de instalaciones eléctricas | labor |
| Suministro: Planos de instalaciones eléctricas | material |
| Proyectista Sanitario - Planos instalaciones sanitarias | labor |
| Suministro: Planos instalaciones sanitarias | material |
| Proyectista Protección Contra Incendio - Planos sistema contra incendio | labor |
| Suministro: Planos sistema contra incendio | material |
| Especialista Técnico - Especificaciones técnicas generales | labor |
| Suministro: Especificaciones técnicas generales | material |
| Ingeniero Calculista - Especificaciones técnicas estructurales | labor |
| Suministro: Especificaciones técnicas estructurales | material |
| Especialista Técnico - Especificaciones técnicas EESS | labor |
| Suministro: Especificaciones técnicas EESS | material |
| Profesional de Presupuesto - Presupuesto oficial APU por partida | labor |
| Suministro: Presupuesto oficial APU por partida | material |
| Planificador (Scheduler P6) - Programa oficial del proyecto (P6) | labor |
| Suministro: Programa oficial del proyecto (P6) | material |
| Gestor de Permisos - Solicitud permiso de edificación DOM | labor |
| Suministro: Solicitud permiso de edificación DOM | material |
| Gestor de Permisos - Tramitación revisión SEC instalaciones EE | labor |
| Suministro: Tramitación revisión SEC instalaciones EE | material |
| Gestor de Permisos - Revisión planos SERNAGEOMIN | labor |
| Suministro: Revisión planos SERNAGEOMIN | material |
| Gestor de Permisos - Aprobación permiso de edificación | labor |
| Suministro: Aprobación permiso de edificación | material |
| Ingeniero de Calidad (QA/QC) - Plan de aseguramiento de calidad (PAC) | labor |
| Suministro: Plan de aseguramiento de calidad (PAC) | material |
| Asesor Ambiental - Plan de gestión ambiental | labor |
| Suministro: Plan de gestión ambiental | material |
| Experto en Prevención de Riesgos - Plan de gestión de seguridad (PGS) | labor |
| Suministro: Plan de gestión de seguridad (PGS) | material |
| Ingeniero de Laboratorio - Protocolo de ensayos de materiales | labor |
| Suministro: Protocolo de ensayos de materiales | material |
| Planificador (Scheduler P6) - Informe de línea base del proyecto | labor |
| Suministro: Informe de línea base del proyecto | material |
| Jefe de Proyecto - Acta de inicio de obra (kick-off) | labor |
| Suministro: Acta de inicio de obra (kick-off) | material |
| Cuadrilla Instalación de Faenas - Instalación de faenas (bodega, casino, SSHH) | labor |
| Suministro: Instalación de faenas (bodega, casino, SSHH) | material |
| Cuadrilla Instalación de Faenas - Cierre perimetral provisional de obra | labor |
| Suministro: Cierre perimetral provisional de obra | material |
| Cuadrilla Instalación de Faenas - Cartel de obra | labor |
| Suministro: Cartel de obra | material |
| Cuadrilla Movimiento de Tierras - Desbroce y limpieza del terreno | labor |
| Suministro: Desbroce y limpieza del terreno | material |
| Bulldozer / Retroexcavadora - Desbroce y limpieza del terreno | equipment |
| Cuadrilla Topografía - Topografía y trazado ejes de fundaciones | labor |
| Suministro: Topografía y trazado ejes de fundaciones | material |
| Cuadrilla Movimiento de Tierras - Excavación mecánica para fundaciones | labor |
| Suministro: Excavación mecánica para fundaciones | material |
| Retroexcavadora - Excavación mecánica para fundaciones | equipment |
| Cuadrilla Movimiento de Tierras - Excavación manual para correcciones | labor |
| Cuadrilla Movimiento de Tierras - Retiro de excedentes de excavación | labor |
| Suministro: Retiro de excedentes de excavación | material |
| Retroexcavadora - Retiro de excedentes de excavación | equipment |
| Cuadrilla Movimiento de Tierras - Relleno y compactación con material seleccionado | labor |
| Suministro: Relleno y compactación con material seleccionado | material |
| Rodillo / Placa compactadora - Relleno y compactación con material seleccionado | equipment |
| Cuadrilla Hormigonado (Concretero) - Hormigón de limpieza H-10 e=5cm | labor |
| Suministro: Hormigón de limpieza H-10 e=5cm | material |
| Maestro Enfierrador - Enfierradura zapatas (kg) | labor |
| Suministro: Enfierradura zapatas (kg) | material |
| Carpintero de Obra (Moldajes) - Moldaje zapatas aisladas | labor |
| Cuadrilla Hormigonado (Concretero) - Hormigón H-30 zapatas aisladas | labor |
| Suministro: Hormigón H-30 zapatas aisladas | material |
| Maestro Enfierrador - Enfierradura cadena de fundación | labor |
| Suministro: Enfierradura cadena de fundación | material |
| Carpintero de Obra (Moldajes) - Moldaje cadena de fundación | labor |
| Cuadrilla Hormigonado (Concretero) - Hormigón H-30 cadena de fundación | labor |
| Suministro: Hormigón H-30 cadena de fundación | material |
| Maestro Montajista - Pernos de anclaje columnas (set) | labor |
| Suministro: Pernos de anclaje columnas (set) | material |
| Maestro Montajista - Nivelación y alineación placas base | labor |
| Suministro: Nivelación y alineación placas base | material |
| Maestro Montajista - Grouting placas base columnas | labor |
| Suministro: Grouting placas base columnas | material |
| Cuadrilla Movimiento de Tierras - Relleno interior con ripio compactado e=20cm | labor |
| Suministro: Relleno interior con ripio compactado e=20cm | material |
| Rodillo / Placa compactadora - Relleno interior con ripio compactado e=20cm | equipment |
| Cuadrilla Movimiento de Tierras - Compactación de subrasante (95% Proctor) | labor |
| Suministro: Compactación de subrasante (95% Proctor) | material |
| Rodillo / Placa compactadora - Compactación de subrasante (95% Proctor) | equipment |
| Cuadrilla Movimiento de Tierras - Sub-base granular e=15cm compactada | labor |
| Suministro: Sub-base granular e=15cm compactada | material |
| Rodillo / Placa compactadora - Sub-base granular e=15cm compactada | equipment |
| Maestro Enfierrador - Enfierradura losa malla ø8@20cm | labor |
| Suministro: Enfierradura losa malla ø8@20cm | material |
| Carpintero de Obra (Moldajes) - Moldaje perimetral losa | labor |
| Suministro: Moldaje perimetral losa | material |
| Instalador Sanitario (EESS) - Instalación tuberías embutidas EESS antes de losa | labor |
| Suministro: Instalación tuberías embutidas EESS antes de losa | material |
| Camión hormigonera + regla vibratoria - Instalación tuberías embutidas EESS antes de losa | equipment |
| Instalador Eléctrico (EE) - Instalación ductos eléctricos embutidos | labor |
| Suministro: Instalación ductos eléctricos embutidos | material |
| Cuadrilla Hormigonado (Concretero) - Hormigón H-30 losa e=15cm | labor |
| Suministro: Hormigón H-30 losa e=15cm | material |
| Camión hormigonera + regla vibratoria - Hormigón H-30 losa e=15cm | equipment |
| Cuadrilla Terminaciones de Losa - Endurecedor superficial minerálico | labor |
| Suministro: Endurecedor superficial minerálico | material |
| Equipo de pulido (helicóptero) - Endurecedor superficial minerálico | equipment |
| Cuadrilla Terminaciones de Losa - Curado de losa con membrana | labor |
| Suministro: Curado de losa con membrana | material |
| Cuadrilla Terminaciones de Losa - Corte de juntas de dilatación | labor |
| Suministro: Corte de juntas de dilatación | material |
| Cuadrilla Terminaciones de Losa - Sellado de juntas con poliuretano | labor |
| Suministro: Sellado de juntas con poliuretano | material |
| Cuadrilla Hormigonado (Concretero) - Pavimento exterior acceso hormigón H-25 e=12cm | labor |
| Suministro: Pavimento exterior acceso hormigón H-25 e=12cm | material |
| Camión hormigonera + vibrador - Pavimento exterior acceso hormigón H-25 e=12cm | equipment |
| Cuadrilla Hormigonado (Concretero) - Bordillo hormigón prefabricado | labor |
| Suministro: Bordillo hormigón prefabricado | material |
| Cuadrilla Hormigonado (Concretero) - Veredas peatonales H-25 | labor |
| Suministro: Veredas peatonales H-25 | material |
| Camión hormigonera + vibrador - Veredas peatonales H-25 | equipment |
| Cuadrilla Hormigonado (Concretero) - Hormigón cierre perimetral inferior (soleo) | labor |
| Suministro: Hormigón cierre perimetral inferior (soleo) | material |
| Camión hormigonera + vibrador - Hormigón cierre perimetral inferior (soleo) | equipment |
| Maestro Sanitario / Obras - Foso de inspección instalaciones | labor |
| Suministro: Foso de inspección instalaciones | material |
| Retroexcavadora menor - Foso de inspección instalaciones | equipment |
| Maestro Sanitario / Obras - Cámara de inspección aguas lluvia | labor |
| Suministro: Cámara de inspección aguas lluvia | material |
| Retroexcavadora menor - Cámara de inspección aguas lluvia | equipment |
| Maestro Sanitario / Obras - Canaleta aguas lluvia perimetral | labor |
| Suministro: Canaleta aguas lluvia perimetral | material |
| Maestro Sanitario / Obras - Red de alcantarillado pluvial enterrada | labor |
| Suministro: Red de alcantarillado pluvial enterrada | material |
| Maestro Sanitario / Obras - Colector de agua lluvia (bajadas techo) | labor |
| Suministro: Colector de agua lluvia (bajadas techo) | material |
| Pintor Industrial (Epóxico) - Pintura suelo epóxico 2 manos demarcación | labor |
| Suministro: Pintura suelo epóxico 2 manos demarcación | material |
| Pintor Industrial (Epóxico) - Demarcación zonas de tránsito y almacén | labor |
| Suministro: Demarcación zonas de tránsito y almacén | material |
| Cuadrilla Hormigonado (Concretero) - Ensayo compresión hormigón (serie 3 probetas) | labor |
| Suministro: Ensayo compresión hormigón (serie 3 probetas) | material |
| Camión hormigonera + vibrador - Ensayo compresión hormigón (serie 3 probetas) | equipment |
| Cuadrilla Movimiento de Tierras - Ensayo compactación Proctor modificado | labor |
| Suministro: Ensayo compactación Proctor modificado | material |
| Rodillo / Placa compactadora - Ensayo compactación Proctor modificado | equipment |
| Maestro Estructurero (Taller) - Fabricación columnas perfil HEB 260 | labor |
| Suministro: Fabricación columnas perfil HEB 260 | material |
| Maestro Estructurero (Taller) - Fabricación vigas principales reticuladas | labor |
| Suministro: Fabricación vigas principales reticuladas | material |
| Maestro Estructurero (Taller) - Fabricación vigas secundarias IPE 240 | labor |
| Suministro: Fabricación vigas secundarias IPE 240 | material |
| Maestro Estructurero (Taller) - Fabricación viguetas de cubierta | labor |
| Suministro: Fabricación viguetas de cubierta | material |
| Maestro Estructurero (Taller) - Fabricación correas de techo C200 | labor |
| Suministro: Fabricación correas de techo C200 | material |
| Maestro Estructurero (Taller) - Fabricación tirantes y cruces de San Andrés | labor |
| Suministro: Fabricación tirantes y cruces de San Andrés | material |
| Maestro Estructurero (Taller) - Fabricación portones ingreso 5x6m | labor |
| Suministro: Fabricación portones ingreso 5x6m | material |
| Maestro Estructurero (Taller) - Fabricación portón salida emergencia 3x4m | labor |
| Suministro: Fabricación portón salida emergencia 3x4m | material |
| Maestro Estructurero (Taller) - Fabricación plataformas de acceso acero | labor |
| Suministro: Fabricación plataformas de acceso acero | material |
| Maestro Estructurero (Taller) - Fabricación escaleras metálicas interiores | labor |
| Suministro: Fabricación escaleras metálicas interiores | material |
| Pintor Industrial (Anticorrosivo) - Granallado y pintura anticorrosiva 2 manos | labor |
| Suministro: Granallado y pintura anticorrosiva 2 manos | material |
| Equipo de granallado + compresor - Granallado y pintura anticorrosiva 2 manos | equipment |
| Pintor Industrial - Pintura esmalte color final RAL 7035 | labor |
| Suministro: Pintura esmalte color final RAL 7035 | material |
| Equipo airless + andamios - Pintura esmalte color final RAL 7035 | equipment |
| Cuadrilla de Transporte/Carga - Transporte de estructura a obra | labor |
| Suministro: Transporte de estructura a obra | material |
| Camión cama baja - Transporte de estructura a obra | equipment |
| Operador de Maquinaria - Habilitación acceso maquinaria pesada a galpón | labor |
| Suministro: Habilitación acceso maquinaria pesada a galpón | material |
| Maquinaria movimiento de tierra - Habilitación acceso maquinaria pesada a galpón | equipment |
| Cuadrilla de Montaje (Rigger) - Montaje columnas principales | labor |
| Suministro: Montaje columnas principales | material |
| Camión grúa / grúa móvil - Montaje columnas principales | equipment |
| Cuadrilla de Montaje (Rigger) - Montaje vigas principales | labor |
| Suministro: Montaje vigas principales | material |
| Camión grúa / grúa móvil - Montaje vigas principales | equipment |
| Cuadrilla de Montaje (Rigger) - Montaje vigas secundarias | labor |
| Suministro: Montaje vigas secundarias | material |
| Camión grúa / grúa móvil - Montaje vigas secundarias | equipment |
| Cuadrilla de Montaje (Rigger) - Montaje viguetas de cubierta | labor |
| Suministro: Montaje viguetas de cubierta | material |
| Camión grúa / grúa móvil - Montaje viguetas de cubierta | equipment |
| Cuadrilla de Montaje (Rigger) - Montaje correas de techo | labor |
| Suministro: Montaje correas de techo | material |
| Camión grúa / grúa móvil - Montaje correas de techo | equipment |
| Cuadrilla de Montaje (Rigger) - Montaje tirantes y arriostramiento | labor |
| Cuadrilla de Montaje (Rigger) - Montaje portones de acceso vehicular | labor |
| Suministro: Montaje portones de acceso vehicular | material |
| Camión grúa / grúa móvil - Montaje portones de acceso vehicular | equipment |
| Cuadrilla de Montaje (Rigger) - Montaje puertas de emergencia | labor |
| Suministro: Montaje puertas de emergencia | material |
| Camión grúa / grúa móvil - Montaje puertas de emergencia | equipment |
| Cuadrilla de Montaje (Rigger) - Montaje plataformas y escaleras | labor |
| Suministro: Montaje plataformas y escaleras | material |
| Camión grúa / grúa móvil - Montaje plataformas y escaleras | equipment |
| Cuadrilla Cubierta y Cerramientos - Cubierta panel sandwich TR-5 e=50mm | labor |
| Suministro: Cubierta panel sandwich TR-5 e=50mm | material |
| Plataforma elevadora (manlift) - Cubierta panel sandwich TR-5 e=50mm | equipment |
| Cuadrilla Cubierta y Cerramientos - Cierre lateral panel metálico e=40mm | labor |
| Suministro: Cierre lateral panel metálico e=40mm | material |
| Plataforma elevadora (manlift) - Cierre lateral panel metálico e=40mm | equipment |
| Cuadrilla Cubierta y Cerramientos - Frente fachada con panel metálico | labor |
| Suministro: Frente fachada con panel metálico | material |
| Plataforma elevadora (manlift) - Frente fachada con panel metálico | equipment |
| Cuadrilla Cubierta y Cerramientos - Instalación canaletas y bajadas de aguas lluvia | labor |
| Suministro: Instalación canaletas y bajadas de aguas lluvia | material |
| Cuadrilla Cubierta y Cerramientos - Instalación cumbreras y remates perimetrales | labor |
| Suministro: Instalación cumbreras y remates perimetrales | material |
| Cuadrilla Cubierta y Cerramientos - Instalación claraboyas translúcidas | labor |
| Suministro: Instalación claraboyas translúcidas | material |
| Cuadrilla Cubierta y Cerramientos - Instalación rejillas de ventilación cenital | labor |
| Suministro: Instalación rejillas de ventilación cenital | material |
| Cuadrilla Cubierta y Cerramientos - Sellado de encuentros cubierta-muro | labor |
| Suministro: Sellado de encuentros cubierta-muro | material |
| Cuadrilla Cubierta y Cerramientos - Barrera de vapor bajo cubierta | labor |
| Suministro: Barrera de vapor bajo cubierta | material |
| Cuadrilla Cubierta y Cerramientos - Aislación térmica cubierta lana mineral e=80mm | labor |
| Suministro: Aislación térmica cubierta lana mineral e=80mm | material |
| Cuadrilla Aislación - Aislación muros laterales e=50mm | labor |
| Suministro: Aislación muros laterales e=50mm | material |
| Cuadrilla Cubierta y Cerramientos - Cierre inferior muro con placa fibrocemento | labor |
| Suministro: Cierre inferior muro con placa fibrocemento | material |
| Cuadrilla Cubierta y Cerramientos - Instalación ventanas fachada (0.8x1.0m) | labor |
| Suministro: Instalación ventanas fachada (0.8x1.0m) | material |
| Cuadrilla Cubierta y Cerramientos - Instalación ventanas laterales (0.6x0.8m) | labor |
| Suministro: Instalación ventanas laterales (0.6x0.8m) | material |
| Pintor Industrial - Pintura exterior de fachadas | labor |
| Suministro: Pintura exterior de fachadas | material |
| Equipo airless + andamios - Pintura exterior de fachadas | equipment |
| Pintor Industrial - Pintura interior galpón (vigas y columnas) | labor |
| Suministro: Pintura interior galpón (vigas y columnas) | material |
| Equipo airless + andamios - Pintura interior galpón (vigas y columnas) | equipment |
| Cuadrilla de Aseo - Limpieza post montaje estructura | labor |
| Suministro: Limpieza post montaje estructura | material |
| Inspector QA/QC Estructuras - Apriete y revisión pernos de alta resistencia | labor |
| Suministro: Apriete y revisión pernos de alta resistencia | material |
| Inspector QA/QC Estructuras - Inspección radiográfica soldaduras críticas | labor |
| Suministro: Inspección radiográfica soldaduras críticas | material |
| Equipo de gammagrafía industrial - Inspección radiográfica soldaduras críticas | equipment |
| Inspector QA/QC Estructuras - Prueba de carga estructura (1.5x sobrecarga) | labor |
| Suministro: Prueba de carga estructura (1.5x sobrecarga) | material |
| Instrumental de medición/topografía - Prueba de carga estructura (1.5x sobrecarga) | equipment |
| Cuadrilla de Montaje (Rigger) - Control dimensional post montaje | labor |
| Suministro: Control dimensional post montaje | material |
| Camión grúa / grúa móvil - Control dimensional post montaje | equipment |
| Proyectista (As-Built) - Entrega de planos as-built estructura | labor |
| Suministro: Entrega de planos as-built estructura | material |
| Maestro Eléctrico - Tablero general BT 400A con protecciones | labor |
| Suministro: Tablero general BT 400A con protecciones | material |
| Maestro Eléctrico - Tablero de alumbrado y tomacorrientes | labor |
| Suministro: Tablero de alumbrado y tomacorrientes | material |
| Maestro Eléctrico - Tablero de fuerza motores | labor |
| Suministro: Tablero de fuerza motores | material |
| Maestro Eléctrico - Canalización conduit EMT 3" para circuito principal | labor |
| Suministro: Canalización conduit EMT 3" para circuito principal | material |
| Maestro Eléctrico - Canalización conduit EMT 1" alumbrado | labor |
| Suministro: Canalización conduit EMT 1" alumbrado | material |
| Maestro Eléctrico - Canalización conduit EMT 1/2" tomacorrientes | labor |
| Suministro: Canalización conduit EMT 1/2" tomacorrientes | material |
| Maestro Eléctrico - Cable poder 4x16mm² (alimentador principal) | labor |
| Suministro: Cable poder 4x16mm² (alimentador principal) | material |
| Maestro Eléctrico - Cable XLPE 4x6mm² circuitos secundarios | labor |
| Suministro: Cable XLPE 4x6mm² circuitos secundarios | material |
| Maestro Eléctrico - Cable XLPE 3x2.5mm² alumbrado | labor |
| Suministro: Cable XLPE 3x2.5mm² alumbrado | material |
| Maestro Eléctrico - Luminaria LED industrial highbay 200W UFO | labor |
| Suministro: Luminaria LED industrial highbay 200W UFO | material |
| Maestro Eléctrico - Luminaria LED fluorescente 2x36W oficinas | labor |
| Suministro: Luminaria LED fluorescente 2x36W oficinas | material |
| Maestro Eléctrico - Luminaria exterior LED 150W con poste | labor |
| Suministro: Luminaria exterior LED 150W con poste | material |
| Maestro Eléctrico - Interruptores, tomacorrientes y accesorios | labor |
| Suministro: Interruptores, tomacorrientes y accesorios | material |
| Maestro Eléctrico - Sistema de puesta a tierra (red malla) | labor |
| Suministro: Sistema de puesta a tierra (red malla) | material |
| Inspector Eléctrico (SEC) - Medición de resistencia de tierra (<5?) | labor |
| Suministro: Medición de resistencia de tierra (<5?) | material |
| Telurímetro - Medición de resistencia de tierra (<5?) | equipment |
| Maestro Eléctrico - Sistema UPS oficina administración 3KVA | labor |
| Suministro: Sistema UPS oficina administración 3KVA | material |
| Equipos y herramientas menores - Sistema UPS oficina administración 3KVA | equipment |
| Maestro Eléctrico - Generador de emergencia 50KVA (arriendo) | labor |
| Suministro: Generador de emergencia 50KVA (arriendo) | material |
| Generador 50KVA (arriendo) - Generador de emergencia 50KVA (arriendo) | equipment |
| Inspector Eléctrico (SEC) - Revisión SEC y emisión informe | labor |
| Suministro: Revisión SEC y emisión informe | material |
| Maestro Gasfíter / Sanitario - Red AP enterrada PVC PN10 ø63mm | labor |
| Suministro: Red AP enterrada PVC PN10 ø63mm | material |
| Maestro Gasfíter / Sanitario - Red AP interior PVC PN10 ø25mm | labor |
| Suministro: Red AP interior PVC PN10 ø25mm | material |
| Maestro Gasfíter / Sanitario - Artefactos sanitarios (WC+lavamanos+urinario) | labor |
| Suministro: Artefactos sanitarios (WC+lavamanos+urinario) | material |
| Maestro Gasfíter / Sanitario - Instalación duchas SSHH personal | labor |
| Suministro: Instalación duchas SSHH personal | material |
| Maestro Gasfíter / Sanitario - Red alcantarillado interior PVC ø110mm | labor |
| Suministro: Red alcantarillado interior PVC ø110mm | material |
| Maestro Gasfíter / Sanitario - Red alcantarillado exterior PVC ø160mm | labor |
| Suministro: Red alcantarillado exterior PVC ø160mm | material |
| Maestro Gasfíter / Sanitario - Cámara de inspección aguas servidas | labor |
| Suministro: Cámara de inspección aguas servidas | material |
| Maestro Gasfíter / Sanitario - Trampa de grasas | labor |
| Suministro: Trampa de grasas | material |
| Maestro Gasfíter / Sanitario - Instalación calefón 10L gas licuado | labor |
| Suministro: Instalación calefón 10L gas licuado | material |
| Maestro Gasfíter / Sanitario - Construcción SSHH + caseta prefabricada 15m² | labor |
| Suministro: Construcción SSHH + caseta prefabricada 15m² | material |
| Instalador Protección Contra Incendio - Red húmeda rociadores NFPA-13 ø63mm | labor |
| Suministro: Red húmeda rociadores NFPA-13 ø63mm | material |
| Instalador Protección Contra Incendio - Rociadores automáticos estándar 68°C | labor |
| Suministro: Rociadores automáticos estándar 68°C | material |
| Equipo de prueba hidráulica - Rociadores automáticos estándar 68°C | equipment |
| Instalador Protección Contra Incendio - Central de detección incendio 8 zonas | labor |
| Suministro: Central de detección incendio 8 zonas | material |
| Instrumental de comisionamiento - Central de detección incendio 8 zonas | equipment |
| Instalador Protección Contra Incendio - Detectores de humo fotoeléctricos | labor |
| Suministro: Detectores de humo fotoeléctricos | material |
| Instrumental de comisionamiento - Detectores de humo fotoeléctricos | equipment |
| Instalador Protección Contra Incendio - Detectores temperatura 58°C | labor |
| Suministro: Detectores temperatura 58°C | material |
| Instrumental de comisionamiento - Detectores temperatura 58°C | equipment |
| Instalador Protección Contra Incendio - Pulsadores manuales de alarma | labor |
| Suministro: Pulsadores manuales de alarma | material |
| Instalador Protección Contra Incendio - Sirenas estroboscópicas de alarma | labor |
| Suministro: Sirenas estroboscópicas de alarma | material |
| Instalador Protección Contra Incendio - Gabinetes contra incendio 1.5" completos | labor |
| Suministro: Gabinetes contra incendio 1.5" completos | material |
| Instalador Protección Contra Incendio - Extintores PQS 12kg ABC | labor |
| Suministro: Extintores PQS 12kg ABC | material |
| Instalador Protección Contra Incendio - Estanque de reserva agua CI 20m³ | labor |
| Suministro: Estanque de reserva agua CI 20m³ | material |
| Instalador Protección Contra Incendio - Grupo de presión CI motor-bomba 30HP | labor |
| Suministro: Grupo de presión CI motor-bomba 30HP | material |
| Equipos y herramientas menores - Grupo de presión CI motor-bomba 30HP | equipment |
| Instalador Protección Contra Incendio - Prueba hidráulica red CI (1.5x presión trabajo) | labor |
| Suministro: Prueba hidráulica red CI (1.5x presión trabajo) | material |
| Equipo de prueba hidráulica (bomba) - Prueba hidráulica red CI (1.5x presión trabajo) | equipment |
| Instalador de Ventilación/Climatización - Extractor industrial axial 15.000m³/h | labor |
| Suministro: Extractor industrial axial 15.000m³/h | material |
| Plataforma elevadora / izaje - Extractor industrial axial 15.000m³/h | equipment |
| Instalador de Ventilación/Climatización - Ventiladores de inyección 8.000m³/h | labor |
| Suministro: Ventiladores de inyección 8.000m³/h | material |
| Plataforma elevadora / izaje - Ventiladores de inyección 8.000m³/h | equipment |
| Instalador de Ventilación/Climatización - Ductos metálicos galvanizados ventilación | labor |
| Suministro: Ductos metálicos galvanizados ventilación | material |
| Instalador de Ventilación/Climatización - Rejillas de admisión aire fresco fachada | labor |
| Suministro: Rejillas de admisión aire fresco fachada | material |
| Instalador de Ventilación/Climatización - Control automático ventilación (termostato) | labor |
| Suministro: Control automático ventilación (termostato) | material |
| Instalador de Ventilación/Climatización - Sistema extracción gases batería carga montacarga | labor |
| Suministro: Sistema extracción gases batería carga montacarga | material |
| Especialista en Comisionamiento - Pruebas y comisionamiento instalaciones EE | labor |
| Suministro: Pruebas y comisionamiento instalaciones EE | material |
| Maestro Gasfíter / Sanitario - Pruebas y comisionamiento SSHH | labor |
| Suministro: Pruebas y comisionamiento SSHH | material |
| Proyectista (As-Built) - Planos as-built instalaciones | labor |
| Suministro: Planos as-built instalaciones | material |
| Proyectista (As-Built) - Informe final de instalaciones y ensayos | labor |
| Suministro: Informe final de instalaciones y ensayos | material |
| Instalador de Estanterías (Racks) - Estantería metálica pesada 5 niveles 1000kg/niv | labor |
| Suministro: Estantería metálica pesada 5 niveles 1000kg/niv | material |
| Instalador de Estanterías (Racks) - Estantería metálica mediana 3 niveles 500kg/niv | labor |
| Suministro: Estantería metálica mediana 3 niveles 500kg/niv | material |
| Instalador de Estanterías (Racks) - Estantería para neumáticos y partes largas | labor |
| Suministro: Estantería para neumáticos y partes largas | material |
| Cuadrilla Montaje Equipamiento - Mesones metálicos de trabajo 200x80cm | labor |
| Suministro: Mesones metálicos de trabajo 200x80cm | material |
| Cuadrilla Montaje Equipamiento - Casilleros personal (4 puertas) | labor |
| Suministro: Casilleros personal (4 puertas) | material |
| Instalador de Señalética - Señalética de seguridad vinilo reflectante | labor |
| Suministro: Señalética de seguridad vinilo reflectante | material |
| Instalador de Señalética - Señalética de almacenamiento y zonas | labor |
| Suministro: Señalética de almacenamiento y zonas | material |
| Instalador de Señalética - Señalética de emergencia y evacuación | labor |
| Suministro: Señalética de emergencia y evacuación | material |
| Pintor (Demarcación) - Pintura de señalética piso (vías tránsito) | labor |
| Suministro: Pintura de señalética piso (vías tránsito) | material |
| Equipo airless + andamios - Pintura de señalética piso (vías tránsito) | equipment |
| Técnico en Electrónica/CCTV - Cámaras CCTV domo 4K interior | labor |
| Suministro: Cámaras CCTV domo 4K interior | material |
| Técnico en Electrónica/CCTV - Cámaras CCTV exterior PTZ 4K | labor |
| Suministro: Cámaras CCTV exterior PTZ 4K | material |
| Técnico en Electrónica/CCTV - DVR 16 canales 4K + disco 8TB | labor |
| Suministro: DVR 16 canales 4K + disco 8TB | material |
| Técnico en Electrónica/CCTV - Monitor 55" sala de control | labor |
| Suministro: Monitor 55" sala de control | material |
| Técnico en Electrónica/Seguridad - Sistema control de acceso biométrico | labor |
| Suministro: Sistema control de acceso biométrico | material |
| Técnico en Electrónica/Seguridad - Torniquete de acceso peatonal | labor |
| Suministro: Torniquete de acceso peatonal | material |
| Técnico en Electrónica/Seguridad - Barrera vehicular automática | labor |
| Suministro: Barrera vehicular automática | material |
| Cuadrilla Montaje Equipamiento - Mobiliario oficina bodegaje (escritorios+sillas) | labor |
| Suministro: Mobiliario oficina bodegaje (escritorios+sillas) | material |
| Técnico en Redes/TI - Computadores gestión bodega (3 equipos) | labor |
| Suministro: Computadores gestión bodega (3 equipos) | material |
| Técnico en Redes/TI - Impresora código de barras + lectores | labor |
| Suministro: Impresora código de barras + lectores | material |
| Técnico en Redes/TI - Instalación sistema WiFi industrial | labor |
| Suministro: Instalación sistema WiFi industrial | material |
| Pintor - Pintura interior muros SSHH | labor |
| Suministro: Pintura interior muros SSHH | material |
| Equipo airless + andamios - Pintura interior muros SSHH | equipment |
| Maestro Ceramista - Revestimiento cerámico SSHH | labor |
| Suministro: Revestimiento cerámico SSHH | material |
| Instalador de Cielos - Cielo falso planchas yeso-cartón oficinas | labor |
| Suministro: Cielo falso planchas yeso-cartón oficinas | material |
| Cuadrilla de Aseo y Cierre - Limpieza general de obra | labor |
| Suministro: Limpieza general de obra | material |
| Cuadrilla de Aseo y Cierre - Retiro de instalaciones de faenas | labor |
| Suministro: Retiro de instalaciones de faenas | material |
| Director de Proyecto - Dirección de proyecto (DP) - mensual | labor |
| Administrador de Contrato - Administración de contratos | labor |
| Jefe de Calidad (QA/QC) - Gestión de calidad (inspecciones + libros) | labor |
| Experto en Prevención de Riesgos - Prevención de riesgos en obra | labor |
| Profesional de Control de Proyecto - Informes de avance mensuales al cliente | labor |
| Suministro: Informes de avance mensuales al cliente | material |
| Jefe de Terreno - Reuniones de coordinación semanal | labor |
| Suministro: Reuniones de coordinación semanal | material |
| Profesional de Control de Proyecto - Control de costos y EVM mensual | labor |
| Profesional de Cierre - Tramitación recepción definitiva DOM | labor |
| Suministro: Tramitación recepción definitiva DOM | material |
| Profesional de Cierre - Entrega dossier técnico final | labor |
| Suministro: Entrega dossier técnico final | material |
| Profesional de Cierre - Acta de entrega y recepción conforme | labor |
| Suministro: Acta de entrega y recepción conforme | material |

## Schedule

| ID | WBS | Activity | Type | Duration | Start | Finish | Predecessors | Complete | Remaining | Total float | Free float | Resources | Cost |
| --- | --- | --- | --- | --- | --- | --- | --- | --- | --- | --- | --- | --- | --- |
|  | 0 | **HITOS DEL SERVICIO** |  |  | 2026-09-07 | 2027-03-03 |  |  |  |  |  |  |  |
| G01 |  | Inicio Gestión (LOE) | milestone | 0d | 2026-09-07 | 2026-09-07 | H00 SF |  |  | 1d | 0d |  |  |
| H00 |  | Inicio del Proyecto / Entrega de terreno (Contractual) | milestone | 0d | 2026-09-07 | 2026-09-07 |  |  |  | 0d |  |  |  |
| H02 |  | Permiso DOM otorgado (Contractual) | milestone | 0d | 2026-10-02 | 2026-10-02 | F118 FF |  |  | 111d | 1d |  |  |
| H03 |  | Acta de inicio firmada / Kick-off | milestone | 0d | 2026-10-05 | 2026-10-05 | F124 FF, H02 FF |  |  | 110d | 1d |  |  |
| H04 |  | Instalación de faenas terminada | milestone | 0d | 2026-10-06 | 2026-10-06 | H03 FF, F202 FF |  |  | 109d | 27d |  |  |
| H01 |  | Ingeniería de detalle aprobada | milestone | 0d | 2026-11-11 | 2026-11-11 | F113 FF, F105 FF, F122 FF, F123 FF, H04 FF |  |  | 82d | 12d |  |  |
| H05 |  | Fundaciones terminadas (Contractual) | milestone | 0d | 2026-11-27 | 2026-11-27 | F218 FF, H01 FF |  |  | 70d | 22d |  |  |
| H06 |  | Radier terminado | milestone | 0d | 2026-12-28 | 2026-12-28 | H05 FF, F230 FF, F233 FF, F234 FF, F243 FF |  |  | 48d | 0d |  |  |
| H07 |  | Estructura metálica montada (Contractual) | milestone | 0d | 2026-12-28 | 2026-12-28 | H06 FF, F320 FF, F321 FF, F322 FF |  |  | 48d | 7d |  |  |
| H08 |  | Cubierta y cerramientos cerrados | milestone | 0d | 2027-01-06 | 2027-01-06 | F334 FF, F327 FF, F328 FF, F332 FF, H07 FF |  |  | 41d | 5d |  |  |
| H09 |  | Pruebas hidráulicas CI OK | milestone | 0d | 2027-01-13 | 2027-01-13 | H08 FF, F439 FF, F431 FF, F432 FF, F433 FF |  |  | 36d | 2d |  |  |
| H10 |  | Instalaciones EE energizadas | milestone | 0d | 2027-01-15 | 2027-01-15 | F417 FF, F410 FF, F411 FF, F415 FF, H09 FF |  |  | 34d | 12d |  |  |
| H11 |  | Comisionamiento finalizado | milestone | 0d | 2027-02-02 | 2027-02-02 | H10 FF, F449 FF, F419 FF, F443 FF, F445 FF |  |  | 22d | 18d |  |  |
| H12 |  | Recepción DOM (Contractual) | milestone | 0d | 2027-02-25 | 2027-02-25 | F607 FF, H11 FF |  |  | 4d | 3d |  |  |
| G02 |  | Fin Gestión (LOE) | milestone | 0d | 2027-03-02 | 2027-03-02 | F600 FF, F601 FF, F602 FF, F603 FF, F604 FF |  |  | 1d |  |  |  |
| H13 |  | Dossier técnico entregado | milestone | 0d | 2027-03-02 | 2027-03-02 | H12 FF, F608 FF |  |  | 1d |  |  |  |
| H14 |  | Entrega final del proyecto (Contractual) | milestone | 0d | 2027-03-03 | 2027-03-03 | F609 FF, F605 FF, F606 FF, G02 FF, H13 FF |  |  | 0d |  |  |  |
|  | 1 | **FASE 1: INGENIERÍA Y PERMISOS** |  |  | 2026-09-07 | 2026-11-11 |  |  |  |  |  |  |  |
|  | 1 | **Estudios de Terreno** |  |  | 2026-09-07 | 2026-09-16 |  |  |  |  |  |  |  |
| F100 |  | Levantamiento topográfico del terreno |  | 3d | 2026-09-07 A | 2026-09-09 A | H00 SS | 100% |  |  |  | Cuadrilla Topografía - Levantamiento topográfico del terreno [200 h] | 2,400,000 |
| F101 |  | Estudio de mecánica de suelos (EMS) |  | 5d | 2026-09-09 A | 2026-09-16 | F100 |  | 5d | 6d | 2d | Ingeniero Geotécnico - Estudio de mecánica de suelos (EMS) [40 h]; Suministro: Estudio de mecánica de suelos (EMS) [1] | 3,327,700 |
|  | 2 | **Arquitectura** |  |  | 2026-09-09 | 2026-09-18 |  |  |  |  |  |  |  |
| F102 |  | Planos de arquitectura (plantas, cortes) |  | 7d | 2026-09-09 A | 2026-09-18 | F100 |  | 7d | 0d |  | Arquitecto Proyectista - Planos de arquitectura (plantas, cortes) [96 h]; Suministro: Planos de arquitectura (plantas, cortes) [1] | 3,105,600 |

| ID | WBS | Activity | Duration | Start | Finish | Predecessors | Total float | Free float | Resources | Cost |
| --- | --- | --- | --- | --- | --- | --- | --- | --- | --- | --- |
|  | 3 | **Ingeniería Estructural** |  | 2026-09-18 | 2026-10-14 |  |  |  |  |  |
| F103 |  | Ingeniería básica estructural | 7d | 2026-09-18 | 2026-09-29 | F102, F101 | 4d | 0d | Ingeniero Calculista - Ingeniería básica estructural [40 h]; Suministro: Ingeniería básica estructural [1] | 4,806,700 |
| F104 |  | Cálculo estructural galpón metálico | 6d | 2026-09-29 | 2026-10-07 | F103 | 4d | 0d | Ingeniero Calculista - Cálculo estructural galpón metálico [50 h]; Suministro: Cálculo estructural galpón metálico [1] | 6,285,600 |
| F105 |  | Memoria de cálculo fundaciones | 8d | 2026-09-29 | 2026-10-08 | F103, F101 | 106d | 24d | Ingeniero Calculista - Memoria de cálculo fundaciones [20 h]; Suministro: Memoria de cálculo fundaciones [1] | 2,588,200 |
| F106 |  | Planos de estructuras metálicas | 6d | 2026-10-07 | 2026-10-14 | F104 | 4d | 0d | Proyectista Estructural - Planos de estructuras metálicas [54 h]; Suministro: Planos de estructuras metálicas [1] | 3,727,800 |
|  | 4 | **Ingeniería Eléctrica** |  | 2026-09-18 | 2026-09-29 |  |  |  |  |  |
| F107 |  | Planos de instalaciones eléctricas | 7d | 2026-09-18 | 2026-09-29 | F102 | 56d | 0d | Proyectista Eléctrico - Planos de instalaciones eléctricas [32 h]; Suministro: Planos de instalaciones eléctricas [1] | 1,892,800 |
|  | 5 | **Ingeniería Sanitaria** |  | 2026-09-18 | 2026-09-25 |  |  |  |  |  |
| F108 |  | Planos instalaciones sanitarias | 5d | 2026-09-18 | 2026-09-25 | F102 | 58d | 0d | Proyectista Sanitario - Planos instalaciones sanitarias [16 h]; Suministro: Planos instalaciones sanitarias [1] | 828,400 |
|  | 6 | **Protección Contra Incendios** |  | 2026-09-18 | 2026-09-29 |  |  |  |  |  |
| F109 |  | Planos sistema contra incendio | 7d | 2026-09-18 | 2026-09-29 | F102 | 110d | 28d | Proyectista Protección Contra Incendio - Planos sistema contra incendio [24 h]; Suministro: Planos sistema contra incendio [1] | 1,330,800 |
|  | 7 | **Especificaciones Técnicas** |  | 2026-09-25 | 2026-10-19 |  |  |  |  |  |
| F110 |  | Especificaciones técnicas generales | 8d | 2026-09-25 | 2026-10-07 | F108 | 90d | 8d | Especialista Técnico - Especificaciones técnicas generales [30 h]; Suministro: Especificaciones técnicas generales [1] | 1,626,900 |
| F112 |  | Especificaciones técnicas EESS | 8d | 2026-09-29 | 2026-10-08 | F107, F108 | 88d | 6d | Especialista Técnico - Especificaciones técnicas EESS [25 h]; Suministro: Especificaciones técnicas EESS [1] | 1,331,100 |
| F111 |  | Especificaciones técnicas estructurales | 8d | 2026-10-07 | 2026-10-19 | F104 | 82d | 0d | Ingeniero Calculista - Especificaciones técnicas estructurales [35 h]; Suministro: Especificaciones técnicas estructurales [1] | 1,848,700 |
|  | 8 | **Presupuesto y Programación** |  | 2026-10-19 | 2026-11-05 |  |  |  |  |  |
| F113 |  | Presupuesto oficial APU por partida | 7d | 2026-10-19 | 2026-10-27 | F110, F111, F112, F116, F117 | 82d | 0d | Profesional de Presupuesto - Presupuesto oficial APU por partida [60 h]; Suministro: Presupuesto oficial APU por partida [1] | 3,327,700 |
| F114 |  | Programa oficial del proyecto (P6) | 7d | 2026-10-27 | 2026-11-05 | F113 | 82d | 0d | Planificador (Scheduler P6) - Programa oficial del proyecto (P6) [45 h]; Suministro: Programa oficial del proyecto (P6) [1] | 2,588,200 |
|  | 9 | **Permisos y Tramitaciones** |  | 2026-09-18 | 2026-10-08 |  |  |  |  |  |
| F115 |  | Solicitud permiso de edificación DOM | 5d | 2026-09-18 | 2026-09-25 | F102 | 0d |  | Gestor de Permisos - Solicitud permiso de edificación DOM [16 h]; Suministro: Solicitud permiso de edificación DOM [1] | 2,070,600 |
| F117 |  | Revisión planos SERNAGEOMIN | 8d | 2026-09-25 | 2026-10-07 | F108 | 90d | 8d | Gestor de Permisos - Revisión planos SERNAGEOMIN [16 h]; Suministro: Revisión planos SERNAGEOMIN [1] | 887,400 |
| F118 |  | Aprobación permiso de edificación | 5d | 2026-09-25 | 2026-10-02 | F115 | 0d |  | Gestor de Permisos - Aprobación permiso de edificación [8 h]; Suministro: Aprobación permiso de edificación [1] | 591,600 |
| F116 |  | Tramitación revisión SEC instalaciones EE | 8d | 2026-09-29 | 2026-10-08 | F107 | 88d | 6d | Gestor de Permisos - Tramitación revisión SEC instalaciones EE [20 h]; Suministro: Tramitación revisión SEC instalaciones EE [1] | 1,109,200 |
|  | 10 | **Planes de Gestión** |  | 2026-10-02 | 2026-11-11 |  |  |  |  |  |
| F124 |  | Acta de inicio de obra (kick-off) | 1d | 2026-10-02 | 2026-10-05 | F118 | 0d |  | Jefe de Proyecto - Acta de inicio de obra (kick-off) [8 h]; Suministro: Acta de inicio de obra (kick-off) [1] | 443,700 |
| F122 |  | Protocolo de ensayos de materiales | 5d | 2026-10-19 | 2026-10-26 | F111 | 95d | 13d | Ingeniero de Laboratorio - Protocolo de ensayos de materiales [12 h]; Suministro: Protocolo de ensayos de materiales [1] | 665,600 |
| F119 |  | Plan de aseguramiento de calidad (PAC) | 7d | 2026-10-27 | 2026-11-05 | F113 | 82d | 0d | Ingeniero de Calidad (QA/QC) - Plan de aseguramiento de calidad (PAC) [24 h]; Suministro: Plan de aseguramiento de calidad (PAC) [1] | 1,331,100 |
| F120 |  | Plan de gestión ambiental | 7d | 2026-10-27 | 2026-11-05 | F113 | 82d | 0d | Asesor Ambiental - Plan de gestión ambiental [20 h]; Suministro: Plan de gestión ambiental [1] | 1,109,200 |
| F121 |  | Plan de gestión de seguridad (PGS) | 7d | 2026-10-27 | 2026-11-05 | F113 | 82d | 0d | Experto en Prevención de Riesgos - Plan de gestión de seguridad (PGS) [20 h]; Suministro: Plan de gestión de seguridad (PGS) [1] | 1,109,200 |
| F123 |  | Informe de línea base del proyecto | 4d | 2026-11-05 | 2026-11-11 | F114, F119, F120, F121, F109 | 82d | 0d | Planificador (Scheduler P6) - Informe de línea base del proyecto [16 h]; Suministro: Informe de línea base del proyecto [1] | 887,400 |

| ID | WBS | Activity | Duration | Start | Finish | Predecessors | Total float | Free float | Resources | Cost |
| --- | --- | --- | --- | --- | --- | --- | --- | --- | --- | --- |
|  | 2 | **FASE 2: OBRAS CIVILES — FUNDACIONES Y LOSA** |  | 2026-10-05 | 2027-02-02 |  |  |  |  |  |
|  | 1 | **Instalación de Faenas** |  | 2026-10-05 | 2026-10-08 |  |  |  |  |  |
| F200 |  | Instalación de faenas (bodega, casino, SSHH) | 4d | 2026-10-05 | 2026-10-08 | F124 | 0d |  | Cuadrilla Instalación de Faenas - Instalación de faenas (bodega, casino, SSHH) [120 h]; Suministro: Instalación de faenas (bodega, casino, SSHH) [1] | 10,842,800 |
| F201 |  | Cierre perimetral provisional de obra | 3d | 2026-10-05 | 2026-10-08 | F124 | 1d |  | Cuadrilla Instalación de Faenas - Cierre perimetral provisional de obra [54 h]; Suministro: Cierre perimetral provisional de obra [1] | 2,934,000 |
| F202 |  | Cartel de obra | 1d | 2026-10-05 | 2026-10-06 | F124 | 109d | 0d | Cuadrilla Instalación de Faenas - Cartel de obra [10 h]; Suministro: Cartel de obra [1] | 406,600 |
|  | 2 | **Movimiento de Tierras** |  | 2026-10-09 | 2026-10-30 |  |  |  |  |  |
| F203 |  | Desbroce y limpieza del terreno | 3d | 2026-10-09 | 2026-10-14 | F200, F201 | 0d |  | Cuadrilla Movimiento de Tierras - Desbroce y limpieza del terreno [110 h]; Suministro: Desbroce y limpieza del terreno [1]; Bulldozer / Retroexcavadora - Desbroce y limpieza del terreno [1 h] | 1,540,000 |
| F204 |  | Topografía y trazado ejes de fundaciones | 1d | 2026-10-14 | 2026-10-14 | F203, F100 | 0d |  | Cuadrilla Topografía - Topografía y trazado ejes de fundaciones [20 h]; Suministro: Topografía y trazado ejes de fundaciones [1] | 768,000 |
| F205 |  | Excavación mecánica para fundaciones | 4d | 2026-10-15 | 2026-10-20 | F204 | 0d |  | Cuadrilla Movimiento de Tierras - Excavación mecánica para fundaciones [55 h]; Suministro: Excavación mecánica para fundaciones [1]; Retroexcavadora - Excavación mecánica para fundaciones [1 h] | 3,780,000 |
| F206 |  | Excavación manual para correcciones | 4d | 2026-10-21 | 2026-10-26 | F205 | 0d |  | Cuadrilla Movimiento de Tierras - Excavación manual para correcciones [120 h] | 1,020,000 |
| F207 |  | Retiro de excedentes de excavación | 4d | 2026-10-21 | 2026-10-26 | F205 | 15d | 0d | Cuadrilla Movimiento de Tierras - Retiro de excedentes de excavación [32 h]; Suministro: Retiro de excedentes de excavación [1]; Retroexcavadora - Retiro de excedentes de excavación [1 h] | 2,464,000 |
| F208 |  | Relleno y compactación con material seleccionado | 4d | 2026-10-27 | 2026-10-30 | F206, F207 | 15d | 0d | Cuadrilla Movimiento de Tierras - Relleno y compactación con material seleccionado [180 h]; Suministro: Relleno y compactación con material seleccionado [1]; Rodillo / Placa compactadora - Relleno y compactación con material seleccionado [1 h] | 2,445,000 |
|  | 3 | **Fundaciones** |  | 2026-10-27 | 2026-11-19 |  |  |  |  |  |
| F209 |  | Hormigón de limpieza H-10 e=5cm | 3d | 2026-10-27 | 2026-10-29 | F206 | 0d |  | Cuadrilla Hormigonado (Concretero) - Hormigón de limpieza H-10 e=5cm [98 h]; Suministro: Hormigón de limpieza H-10 e=5cm [1] | 2,402,400 |
| F210 |  | Enfierradura zapatas (kg) | 4d | 2026-10-29 | 2026-11-04 | F209 | 0d |  | Maestro Enfierrador - Enfierradura zapatas (kg) [680 h]; Suministro: Enfierradura zapatas (kg) [1] | 14,450,000 |
| F211 |  | Moldaje zapatas aisladas | 4d | 2026-10-29 | 2026-11-04 | F209 | 0d |  | Carpintero de Obra (Moldajes) - Moldaje zapatas aisladas [450 h] | 3,825,000 |
| F212 |  | Hormigón H-30 zapatas aisladas | 3d | 2026-11-04 | 2026-11-09 | F210, F211 | 0d |  | Cuadrilla Hormigonado (Concretero) - Hormigón H-30 zapatas aisladas [380 h]; Suministro: Hormigón H-30 zapatas aisladas [1] | 12,445,000 |
| F216 |  | Pernos de anclaje columnas (set) | 4d | 2026-11-04 | 2026-11-10 | F210, F211 | 7d |  | Maestro Montajista - Pernos de anclaje columnas (set) [96 h]; Suministro: Pernos de anclaje columnas (set) [1] | 1,521,600 |
| F213 |  | Enfierradura cadena de fundación | 4d | 2026-11-09 | 2026-11-13 | F212 | 1d |  | Maestro Enfierrador - Enfierradura cadena de fundación [256 h]; Suministro: Enfierradura cadena de fundación [1] | 5,440,000 |
| F214 |  | Moldaje cadena de fundación | 5d | 2026-11-09 | 2026-11-16 | F212 | 0d |  | Carpintero de Obra (Moldajes) - Moldaje cadena de fundación [800 h] | 6,800,000 |
| F215 |  | Hormigón H-30 cadena de fundación | 3d | 2026-11-16 | 2026-11-19 | F213, F214 | 0d |  | Cuadrilla Hormigonado (Concretero) - Hormigón H-30 cadena de fundación [192 h]; Suministro: Hormigón H-30 cadena de fundación [1] | 6,288,000 |
|  | 4 | **Anclajes y Placas Base** |  | 2026-11-19 | 2026-11-27 |  |  |  |  |  |
| F217 |  | Nivelación y alineación placas base | 3d | 2026-11-19 | 2026-11-24 | F215, F216 | 0d |  | Maestro Montajista - Nivelación y alineación placas base [72 h]; Suministro: Nivelación y alineación placas base [1] | 1,953,600 |
| F218 |  | Grouting placas base columnas | 3d | 2026-11-24 | 2026-11-27 | F217 | 0d |  | Maestro Montajista - Grouting placas base columnas [72 h]; Suministro: Grouting placas base columnas [1] | 1,646,400 |

| ID | WBS | Activity | Duration | Start | Finish | Predecessors | Total float | Free float | Resources | Cost |
| --- | --- | --- | --- | --- | --- | --- | --- | --- | --- | --- |
|  | 5 | **Radier y Losa** |  | 2026-11-19 | 2026-12-28 |  |  |  |  |  |
| F219 |  | Relleno interior con ripio compactado e=20cm | 4d | 2026-11-19 | 2026-11-25 | F215, F235 | 5d | 0d | Cuadrilla Movimiento de Tierras - Relleno interior con ripio compactado e=20cm [384 h]; Suministro: Relleno interior con ripio compactado e=20cm [1]; Rodillo / Placa compactadora - Relleno interior con ripio compactado e=20cm [1 h] | 6,912,000 |
| F220 |  | Compactación de subrasante (95% Proctor) | 4d | 2026-11-25 | 2026-12-01 | F219 | 5d | 0d | Cuadrilla Movimiento de Tierras - Compactación de subrasante (95% Proctor) [100 h]; Suministro: Compactación de subrasante (95% Proctor) [1]; Rodillo / Placa compactadora - Compactación de subrasante (95% Proctor) [1 h] | 2,200,000 |
| F221 |  | Sub-base granular e=15cm compactada | 4d | 2026-12-01 | 2026-12-07 | F220 | 5d | 0d | Cuadrilla Movimiento de Tierras - Sub-base granular e=15cm compactada [180 h]; Suministro: Sub-base granular e=15cm compactada [1]; Rodillo / Placa compactadora - Sub-base granular e=15cm compactada [1 h] | 4,890,000 |
| F222 |  | Enfierradura losa malla ø8@20cm | 4d | 2026-12-07 | 2026-12-10 | F221 | 5d | 0d | Maestro Enfierrador - Enfierradura losa malla ø8@20cm [720 h]; Suministro: Enfierradura losa malla ø8@20cm [1] | 19,200,000 |
| F223 |  | Moldaje perimetral losa | 3d | 2026-12-07 | 2026-12-09 | F221 | 6d | 1d | Carpintero de Obra (Moldajes) - Moldaje perimetral losa [180 h]; Suministro: Moldaje perimetral losa [1] | 3,582,000 |
| F224 |  | Instalación tuberías embutidas EESS antes de losa | 3d | 2026-12-07 | 2026-12-09 | F221, F108 | 6d | 1d | Instalador Sanitario (EESS) - Instalación tuberías embutidas EESS antes de losa [40 h]; Suministro: Instalación tuberías embutidas EESS antes de losa [1]; Camión hormigonera + regla vibratoria - Instalación tuberías embutidas EESS antes de losa [1 h] | 1,626,500 |
| F225 |  | Instalación ductos eléctricos embutidos | 3d | 2026-12-07 | 2026-12-09 | F221, F107 | 6d | 1d | Instalador Eléctrico (EE) - Instalación ductos eléctricos embutidos [105 h]; Suministro: Instalación ductos eléctricos embutidos [1] | 2,695,000 |
| F226 |  | Hormigón H-30 losa e=15cm | 3d | 2026-12-10 | 2026-12-15 | F222, F223, F224, F225 | 5d | 0d | Cuadrilla Hormigonado (Concretero) - Hormigón H-30 losa e=15cm [1050 h]; Suministro: Hormigón H-30 losa e=15cm [1]; Camión hormigonera + regla vibratoria - Hormigón H-30 losa e=15cm [1 h] | 39,300,000 |
| F227 |  | Endurecedor superficial minerálico | 3d | 2026-12-16 | 2026-12-21 | F226 | 14d | 0d | Cuadrilla Terminaciones de Losa - Endurecedor superficial minerálico [200 h]; Suministro: Endurecedor superficial minerálico [1]; Equipo de pulido (helicóptero) - Endurecedor superficial minerálico [1 h] | 8,200,000 |
| F228 |  | Curado de losa con membrana | 3d | 2026-12-16 | 2026-12-21 | F226 | 14d | 0d | Cuadrilla Terminaciones de Losa - Curado de losa con membrana [100 h]; Suministro: Curado de losa con membrana [1] | 2,200,000 |
| F229 |  | Corte de juntas de dilatación | 3d | 2026-12-21 | 2026-12-23 | F227, F228 | 14d | 0d | Cuadrilla Terminaciones de Losa - Corte de juntas de dilatación [36 h]; Suministro: Corte de juntas de dilatación [1] | 738,000 |
| F230 |  | Sellado de juntas con poliuretano | 3d | 2026-12-23 | 2026-12-28 | F229, F237, F238 | 14d | 0d | Cuadrilla Terminaciones de Losa - Sellado de juntas con poliuretano [45 h]; Suministro: Sellado de juntas con poliuretano [1] | 1,062,000 |
|  | 6 | **Pavimentos y Obras Exteriores** |  | 2026-11-19 | 2026-12-15 |  |  |  |  |  |
| F234 |  | Hormigón cierre perimetral inferior (soleo) | 4d | 2026-11-19 | 2026-11-25 | F215 | 72d | 24d | Cuadrilla Hormigonado (Concretero) - Hormigón cierre perimetral inferior (soleo) [270 h]; Suministro: Hormigón cierre perimetral inferior (soleo) [1]; Camión hormigonera + vibrador - Hormigón cierre perimetral inferior (soleo) [1 h] | 3,582,000 |
| F231 |  | Pavimento exterior acceso hormigón H-25 e=12cm | 5d | 2026-11-27 | 2026-12-03 | F218 | 41d | 0d | Cuadrilla Hormigonado (Concretero) - Pavimento exterior acceso hormigón H-25 e=12cm [400 h]; Suministro: Pavimento exterior acceso hormigón H-25 e=12cm [1]; Camión hormigonera + vibrador - Pavimento exterior acceso hormigón H-25 e=12cm [1 h] | 5,060,000 |
| F232 |  | Bordillo hormigón prefabricado | 4d | 2026-12-04 | 2026-12-09 | F231 | 57d | 0d | Cuadrilla Hormigonado (Concretero) - Bordillo hormigón prefabricado [64 h]; Suministro: Bordillo hormigón prefabricado [1] | 1,304,000 |
| F233 |  | Veredas peatonales H-25 | 4d | 2026-12-10 | 2026-12-15 | F232, F235 | 57d | 9d | Cuadrilla Hormigonado (Concretero) - Veredas peatonales H-25 [120 h]; Suministro: Veredas peatonales H-25 [1]; Camión hormigonera + vibrador - Veredas peatonales H-25 [1 h] | 1,356,000 |
|  | 7 | **Obras de Drenaje** |  | 2026-11-02 | 2027-01-12 |  |  |  |  |  |
| F235 |  | Foso de inspección instalaciones | 4d | 2026-11-02 | 2026-11-05 | F208 | 15d | 10d | Maestro Sanitario / Obras - Foso de inspección instalaciones [48 h]; Suministro: Foso de inspección instalaciones [1]; Retroexcavadora menor - Foso de inspección instalaciones [1 h] | 1,536,000 |
| F236 |  | Cámara de inspección aguas lluvia | 4d | 2026-11-02 | 2026-11-05 | F208 | 45d | 0d | Maestro Sanitario / Obras - Cámara de inspección aguas lluvia [48 h]; Suministro: Cámara de inspección aguas lluvia [1]; Retroexcavadora menor - Cámara de inspección aguas lluvia [1 h] | 1,761,900 |
| F237 |  | Canaleta aguas lluvia perimetral | 4d | 2026-11-05 | 2026-11-11 | F236 | 45d | 31d | Maestro Sanitario / Obras - Canaleta aguas lluvia perimetral [80 h]; Suministro: Canaleta aguas lluvia perimetral [1] | 4,048,000 |
| F238 |  | Red de alcantarillado pluvial enterrada | 4d | 2026-11-05 | 2026-11-11 | F236 | 45d | 31d | Maestro Sanitario / Obras - Red de alcantarillado pluvial enterrada [80 h]; Suministro: Red de alcantarillado pluvial enterrada [1] | 2,536,000 |
| F239 |  | Colector de agua lluvia (bajadas techo) | 4d | 2027-01-06 | 2027-01-12 | F326 | 36d |  | Maestro Sanitario / Obras - Colector de agua lluvia (bajadas techo) [24 h]; Suministro: Colector de agua lluvia (bajadas techo) [1] | 614,400 |

| ID | WBS | Activity | Duration | Start | Finish | Predecessors | Total float | Free float | Resources | Cost |
| --- | --- | --- | --- | --- | --- | --- | --- | --- | --- | --- |
|  | 8 | **Terminaciones de Piso** |  | 2027-01-15 | 2027-01-28 |  |  |  |  |  |
| F240 |  | Pintura suelo epóxico 2 manos demarcación | 5d | 2027-01-15 | 2027-01-22 | F339, F230 | 0d |  | Pintor Industrial (Epóxico) - Pintura suelo epóxico 2 manos demarcación [400 h]; Suministro: Pintura suelo epóxico 2 manos demarcación [1] | 15,400,000 |
| F241 |  | Demarcación zonas de tránsito y almacén | 4d | 2027-01-22 | 2027-01-28 | F240 | 0d |  | Pintor Industrial (Epóxico) - Demarcación zonas de tránsito y almacén [60 h]; Suministro: Demarcación zonas de tránsito y almacén [1] | 2,360,000 |
|  | 9 | **Ensayos y Control de Calidad** |  | 2026-12-07 | 2027-02-02 |  |  |  |  |  |
| F243 |  | Ensayo compactación Proctor modificado | 4d | 2026-12-07 | 2026-12-10 | F220, F221 | 60d | 12d | Cuadrilla Movimiento de Tierras - Ensayo compactación Proctor modificado [16 h]; Suministro: Ensayo compactación Proctor modificado [1]; Rodillo / Placa compactadora - Ensayo compactación Proctor modificado [1 h] | 343,200 |
| F242 |  | Ensayo compresión hormigón (serie 3 probetas) | 32d | 2026-12-21 | 2027-02-02 | F212, F215, F227 | 21d |  | Cuadrilla Hormigonado (Concretero) - Ensayo compresión hormigón (serie 3 probetas) [30 h]; Suministro: Ensayo compresión hormigón (serie 3 probetas) [1]; Camión hormigonera + vibrador - Ensayo compresión hormigón (serie 3 probetas) [1 h] | 1,152,000 |
|  | 3 | **FASE 3: ESTRUCTURA METÁLICA Y CUBIERTA** |  | 2026-10-15 | 2027-01-15 |  |  |  |  |  |
|  | 1 | **Fabricación Estructura Metálica** |  | 2026-10-15 | 2026-11-13 |  |  |  |  |  |
| F300 |  | Fabricación columnas perfil HEB 260 | 11d | 2026-10-15 | 2026-10-29 | F106 | 4d | 0d | Maestro Estructurero (Taller) - Fabricación columnas perfil HEB 260 [768 h]; Suministro: Fabricación columnas perfil HEB 260 [1] | 44,016,000 |
| F301 |  | Fabricación vigas principales reticuladas | 11d | 2026-10-15 | 2026-10-29 | F106 | 4d | 0d | Maestro Estructurero (Taller) - Fabricación vigas principales reticuladas [960 h]; Suministro: Fabricación vigas principales reticuladas [1] | 39,736,800 |
| F302 |  | Fabricación vigas secundarias IPE 240 | 11d | 2026-10-15 | 2026-10-29 | F106 | 4d | 0d | Maestro Estructurero (Taller) - Fabricación vigas secundarias IPE 240 [720 h]; Suministro: Fabricación vigas secundarias IPE 240 [1] | 25,980,000 |
| F303 |  | Fabricación viguetas de cubierta | 11d | 2026-10-15 | 2026-10-29 | F106 | 4d | 0d | Maestro Estructurero (Taller) - Fabricación viguetas de cubierta [720 h]; Suministro: Fabricación viguetas de cubierta [1] | 17,124,000 |
| F305 |  | Fabricación tirantes y cruces de San Andrés | 9d | 2026-10-15 | 2026-10-27 | F106 | 6d | 0d | Maestro Estructurero (Taller) - Fabricación tirantes y cruces de San Andrés [250 h]; Suministro: Fabricación tirantes y cruces de San Andrés [1] | 3,250,000 |
| F304 |  | Fabricación correas de techo C200 | 11d | 2026-10-29 | 2026-11-13 | F300 | 27d |  | Maestro Estructurero (Taller) - Fabricación correas de techo C200 [400 h]; Suministro: Fabricación correas de techo C200 [1] | 9,680,000 |
|  | 2 | **Fabricación Portones y Accesos** |  | 2026-10-27 | 2026-11-11 |  |  |  |  |  |
| F306 |  | Fabricación portones ingreso 5x6m | 11d | 2026-10-27 | 2026-11-11 | F305 | 78d | 17d | Maestro Estructurero (Taller) - Fabricación portones ingreso 5x6m [240 h]; Suministro: Fabricación portones ingreso 5x6m [1] | 8,660,400 |
| F307 |  | Fabricación portón salida emergencia 3x4m | 11d | 2026-10-27 | 2026-11-11 | F305 | 78d | 17d | Maestro Estructurero (Taller) - Fabricación portón salida emergencia 3x4m [160 h]; Suministro: Fabricación portón salida emergencia 3x4m [1] | 4,890,600 |
|  | 3 | **Fabricación Plataformas y Escaleras** |  | 2026-10-27 | 2026-11-09 |  |  |  |  |  |
| F308 |  | Fabricación plataformas de acceso acero | 9d | 2026-10-27 | 2026-11-09 | F305 | 39d | 27d | Maestro Estructurero (Taller) - Fabricación plataformas de acceso acero [320 h]; Suministro: Fabricación plataformas de acceso acero [1] | 5,708,000 |
| F309 |  | Fabricación escaleras metálicas interiores | 9d | 2026-10-27 | 2026-11-09 | F305 | 39d | 27d | Maestro Estructurero (Taller) - Fabricación escaleras metálicas interiores [80 h]; Suministro: Fabricación escaleras metálicas interiores [1] | 1,834,000 |
|  | 4 | **Tratamiento Anticorrosivo y Pintura** |  | 2026-10-29 | 2026-11-18 |  |  |  |  |  |
| F310 |  | Granallado y pintura anticorrosiva 2 manos | 10d | 2026-10-29 | 2026-11-12 | F300, F301, F302, F303, F305 | 4d | 0d | Pintor Industrial (Anticorrosivo) - Granallado y pintura anticorrosiva 2 manos [680 h]; Suministro: Granallado y pintura anticorrosiva 2 manos [1]; Equipo de granallado + compresor - Granallado y pintura anticorrosiva 2 manos [1 h] | 34,000,000 |
| F311 |  | Pintura esmalte color final RAL 7035 | 4d | 2026-11-12 | 2026-11-18 | F310 | 4d | 0d | Pintor Industrial - Pintura esmalte color final RAL 7035 [340 h]; Suministro: Pintura esmalte color final RAL 7035 [1]; Equipo airless + andamios - Pintura esmalte color final RAL 7035 [1 h] | 17,000,000 |
|  | 5 | **Logística y Transporte** |  | 2026-11-02 | 2026-11-23 |  |  |  |  |  |
| F313 |  | Habilitación acceso maquinaria pesada a galpón | 3d | 2026-11-02 | 2026-11-04 | F208 | 17d | 0d | Operador de Maquinaria - Habilitación acceso maquinaria pesada a galpón [24 h]; Suministro: Habilitación acceso maquinaria pesada a galpón [1]; Maquinaria movimiento de tierra - Habilitación acceso maquinaria pesada a galpón [1 h] | 1,783,000 |
| F312 |  | Transporte de estructura a obra | 3d | 2026-11-18 | 2026-11-23 | F311 | 4d |  | Cuadrilla de Transporte/Carga - Transporte de estructura a obra [16 h]; Suministro: Transporte de estructura a obra [1]; Camión cama baja - Transporte de estructura a obra [1 h] | 4,330,200 |

| ID | WBS | Activity | Duration | Start | Finish | Predecessors | Total float | Free float | Resources | Cost |
| --- | --- | --- | --- | --- | --- | --- | --- | --- | --- | --- |
|  | 6 | **Montaje Estructura Principal** |  | 2026-11-27 | 2026-12-25 |  |  |  |  |  |
| F314 |  | Montaje columnas principales | 5d | 2026-11-27 | 2026-12-03 | F218, F312, F313 | 0d |  | Cuadrilla de Montaje (Rigger) - Montaje columnas principales [192 h]; Suministro: Montaje columnas principales [1]; Camión grúa / grúa móvil - Montaje columnas principales [1 h] | 4,401,600 |
| F315 |  | Montaje vigas principales | 4d | 2026-12-04 | 2026-12-09 | F314 | 0d |  | Cuadrilla de Montaje (Rigger) - Montaje vigas principales [96 h]; Suministro: Montaje vigas principales [1]; Camión grúa / grúa móvil - Montaje vigas principales [1 h] | 2,139,600 |
| F316 |  | Montaje vigas secundarias | 4d | 2026-12-10 | 2026-12-15 | F315 | 0d |  | Cuadrilla de Montaje (Rigger) - Montaje vigas secundarias [240 h]; Suministro: Montaje vigas secundarias [1]; Camión grúa / grúa móvil - Montaje vigas secundarias [1 h] | 2,904,000 |
| F319 |  | Montaje tirantes y arriostramiento | 5d | 2026-12-10 | 2026-12-16 | F315 | 3d | 0d | Cuadrilla de Montaje (Rigger) - Montaje tirantes y arriostramiento [100 h] | 1,000,000 |
| F317 |  | Montaje viguetas de cubierta | 4d | 2026-12-16 | 2026-12-21 | F316 | 0d |  | Cuadrilla de Montaje (Rigger) - Montaje viguetas de cubierta [240 h]; Suministro: Montaje viguetas de cubierta [1]; Camión grúa / grúa móvil - Montaje viguetas de cubierta [1 h] | 2,748,000 |
| F318 |  | Montaje correas de techo | 4d | 2026-12-22 | 2026-12-25 | F317, F304 | 0d |  | Cuadrilla de Montaje (Rigger) - Montaje correas de techo [200 h]; Suministro: Montaje correas de techo [1]; Camión grúa / grúa móvil - Montaje correas de techo [1 h] | 2,540,000 |
|  | 7 | **Montaje Portones y Accesos** |  | 2026-12-04 | 2026-12-09 |  |  |  |  |  |
| F320 |  | Montaje portones de acceso vehicular | 4d | 2026-12-04 | 2026-12-09 | F314, F306 | 61d | 13d | Cuadrilla de Montaje (Rigger) - Montaje portones de acceso vehicular [32 h]; Suministro: Montaje portones de acceso vehicular [1]; Camión grúa / grúa móvil - Montaje portones de acceso vehicular [1 h] | 866,000 |
| F321 |  | Montaje puertas de emergencia | 4d | 2026-12-04 | 2026-12-09 | F314, F307 | 61d | 13d | Cuadrilla de Montaje (Rigger) - Montaje puertas de emergencia [24 h]; Suministro: Montaje puertas de emergencia [1]; Camión grúa / grúa móvil - Montaje puertas de emergencia [1 h] | 662,200 |
|  | 8 | **Montaje Plataformas y Escaleras** |  | 2026-12-16 | 2026-12-21 |  |  |  |  |  |
| F322 |  | Montaje plataformas y escaleras | 4d | 2026-12-16 | 2026-12-21 | F316, F309, F308 | 12d | 5d | Cuadrilla de Montaje (Rigger) - Montaje plataformas y escaleras [48 h]; Suministro: Montaje plataformas y escaleras [1]; Camión grúa / grúa móvil - Montaje plataformas y escaleras [1 h] | 1,222,600 |
|  | 9 | **Cubierta y Cerramientos** |  | 2026-12-16 | 2027-01-06 |  |  |  |  |  |
| F324 |  | Cierre lateral panel metálico e=40mm | 4d | 2026-12-16 | 2026-12-22 | F319 | 3d | 0d | Cuadrilla Cubierta y Cerramientos - Cierre lateral panel metálico e=40mm [630 h]; Suministro: Cierre lateral panel metálico e=40mm [1]; Plataforma elevadora (manlift) - Cierre lateral panel metálico e=40mm [1 h] | 29,340,000 |
| F325 |  | Frente fachada con panel metálico | 5d | 2026-12-16 | 2026-12-23 | F319 | 6d | 0d | Cuadrilla Cubierta y Cerramientos - Frente fachada con panel metálico [128 h]; Suministro: Frente fachada con panel metálico [1]; Plataforma elevadora (manlift) - Frente fachada con panel metálico [1 h] | 5,728,000 |
| F329 |  | Instalación rejillas de ventilación cenital | 4d | 2026-12-22 | 2026-12-28 | F324 | 3d | 1d | Cuadrilla Cubierta y Cerramientos - Instalación rejillas de ventilación cenital [48 h]; Suministro: Instalación rejillas de ventilación cenital [1] | 1,467,200 |
| F323 |  | Cubierta panel sandwich TR-5 e=50mm | 4d | 2026-12-28 | 2026-12-31 | F318, F319 | 0d |  | Cuadrilla Cubierta y Cerramientos - Cubierta panel sandwich TR-5 e=50mm [840 h]; Suministro: Cubierta panel sandwich TR-5 e=50mm [1]; Plataforma elevadora (manlift) - Cubierta panel sandwich TR-5 e=50mm [1 h] | 40,530,000 |
| F326 |  | Instalación canaletas y bajadas de aguas lluvia | 4d | 2026-12-31 | 2027-01-06 | F323 | 36d | 0d | Cuadrilla Cubierta y Cerramientos - Instalación canaletas y bajadas de aguas lluvia [48 h]; Suministro: Instalación canaletas y bajadas de aguas lluvia [1] | 1,472,000 |
| F327 |  | Instalación cumbreras y remates perimetrales | 4d | 2026-12-31 | 2027-01-06 | F323, F329, F333 | 41d | 0d | Cuadrilla Cubierta y Cerramientos - Instalación cumbreras y remates perimetrales [40 h]; Suministro: Instalación cumbreras y remates perimetrales [1] | 1,220,000 |
| F328 |  | Instalación claraboyas translúcidas | 4d | 2026-12-31 | 2027-01-06 | F323 | 41d | 0d | Cuadrilla Cubierta y Cerramientos - Instalación claraboyas translúcidas [100 h]; Suministro: Instalación claraboyas translúcidas [1] | 4,580,000 |
| F330 |  | Sellado de encuentros cubierta-muro | 4d | 2026-12-31 | 2027-01-06 | F323, F329 | 0d |  | Cuadrilla Cubierta y Cerramientos - Sellado de encuentros cubierta-muro [60 h]; Suministro: Sellado de encuentros cubierta-muro [1] | 920,000 |
|  | 10 | **Aislaciones** |  | 2026-12-22 | 2027-01-06 |  |  |  |  |  |
| F333 |  | Aislación muros laterales e=50mm | 4d | 2026-12-22 | 2026-12-28 | F324 | 44d | 3d | Cuadrilla Aislación - Aislación muros laterales e=50mm [270 h]; Suministro: Aislación muros laterales e=50mm [1] | 5,940,000 |
| F334 |  | Cierre inferior muro con placa fibrocemento | 4d | 2026-12-22 | 2026-12-28 | F324 | 48d | 7d | Cuadrilla Cubierta y Cerramientos - Cierre inferior muro con placa fibrocemento [90 h]; Suministro: Cierre inferior muro con placa fibrocemento [1] | 2,016,000 |
| F331 |  | Barrera de vapor bajo cubierta | 4d | 2026-12-28 | 2026-12-31 | F318 | 41d | 0d | Cuadrilla Cubierta y Cerramientos - Barrera de vapor bajo cubierta [210 h]; Suministro: Barrera de vapor bajo cubierta [1] | 3,780,000 |
| F332 |  | Aislación térmica cubierta lana mineral e=80mm | 4d | 2026-12-31 | 2027-01-06 | F323, F331 | 41d | 0d | Cuadrilla Cubierta y Cerramientos - Aislación térmica cubierta lana mineral e=80mm [420 h]; Suministro: Aislación térmica cubierta lana mineral e=80mm [1] | 9,030,000 |

| ID | WBS | Activity | Duration | Start | Finish | Predecessors | Total float | Free float | Resources | Cost |
| --- | --- | --- | --- | --- | --- | --- | --- | --- | --- | --- |
|  | 11 | **Ventanas y Vanos** |  | 2026-12-22 | 2026-12-29 |  |  |  |  |  |
| F336 |  | Instalación ventanas laterales (0.6x0.8m) | 4d | 2026-12-22 | 2026-12-28 | F324 | 7d | 1d | Cuadrilla Cubierta y Cerramientos - Instalación ventanas laterales (0.6x0.8m) [40 h]; Suministro: Instalación ventanas laterales (0.6x0.8m) [1] | 1,478,000 |
| F335 |  | Instalación ventanas fachada (0.8x1.0m) | 4d | 2026-12-23 | 2026-12-29 | F325 | 6d | 0d | Cuadrilla Cubierta y Cerramientos - Instalación ventanas fachada (0.8x1.0m) [36 h]; Suministro: Instalación ventanas fachada (0.8x1.0m) [1] | 1,130,400 |
|  | 12 | **Pinturas y Terminaciones** |  | 2026-12-29 | 2027-01-15 |  |  |  |  |  |
| F337 |  | Pintura exterior de fachadas | 4d | 2026-12-29 | 2027-01-04 | F325, F335, F336, F329 | 6d | 0d | Pintor Industrial - Pintura exterior de fachadas [318 h]; Suministro: Pintura exterior de fachadas [1]; Equipo airless + andamios - Pintura exterior de fachadas [1 h] | 5,936,000 |
| F338 |  | Pintura interior galpón (vigas y columnas) | 4d | 2027-01-06 | 2027-01-12 | F330, F322 | 0d |  | Pintor Industrial - Pintura interior galpón (vigas y columnas) [144 h]; Suministro: Pintura interior galpón (vigas y columnas) [1]; Equipo airless + andamios - Pintura interior galpón (vigas y columnas) [1 h] | 2,760,000 |
| F339 |  | Limpieza post montaje estructura | 3d | 2027-01-12 | 2027-01-15 | F337, F338 | 0d |  | Cuadrilla de Aseo - Limpieza post montaje estructura [8 h]; Suministro: Limpieza post montaje estructura [1] | 611,300 |
|  | 13 | **Control Calidad Estructura** |  | 2026-12-16 | 2026-12-25 |  |  |  |  |  |
| F340 |  | Apriete y revisión pernos de alta resistencia | 4d | 2026-12-16 | 2026-12-22 | F319 | 36d | 0d | Inspector QA/QC Estructuras - Apriete y revisión pernos de alta resistencia [48 h]; Suministro: Apriete y revisión pernos de alta resistencia [1] | 1,426,500 |
| F341 |  | Inspección radiográfica soldaduras críticas | 4d | 2026-12-16 | 2026-12-22 | F319 | 36d | 0d | Inspector QA/QC Estructuras - Inspección radiográfica soldaduras críticas [80 h]; Suministro: Inspección radiográfica soldaduras críticas [1]; Equipo de gammagrafía industrial - Inspección radiográfica soldaduras críticas [1 h] | 917,000 |
| F342 |  | Prueba de carga estructura (1.5x sobrecarga) | 3d | 2026-12-22 | 2026-12-25 | F340, F341 | 36d | 0d | Inspector QA/QC Estructuras - Prueba de carga estructura (1.5x sobrecarga) [24 h]; Suministro: Prueba de carga estructura (1.5x sobrecarga) [1]; Instrumental de medición/topografía - Prueba de carga estructura (1.5x sobrecarga) [1 h] | 1,783,000 |
| F343 |  | Control dimensional post montaje | 3d | 2026-12-22 | 2026-12-25 | F340 | 36d | 0d | Cuadrilla de Montaje (Rigger) - Control dimensional post montaje [16 h]; Suministro: Control dimensional post montaje [1]; Camión grúa / grúa móvil - Control dimensional post montaje [1 h] | 764,100 |
|  | 14 | **Documentación As-Built** |  | 2026-12-28 | 2026-12-31 |  |  |  |  |  |
| F344 |  | Entrega de planos as-built estructura | 4d | 2026-12-28 | 2026-12-31 | F342, F343 | 36d |  | Proyectista (As-Built) - Entrega de planos as-built estructura [8 h]; Suministro: Entrega de planos as-built estructura [1] | 433,000 |
|  | 4 | **FASE 4: INSTALACIONES (EE + SS + CI + VENT)** |  | 2026-11-02 | 2027-02-02 |  |  |  |  |  |
|  | 1 | **Instalaciones Eléctricas - Tableros** |  | 2026-12-16 | 2026-12-29 |  |  |  |  |  |
| F400 |  | Tablero general BT 400A con protecciones | 5d | 2026-12-16 | 2026-12-22 | F226 | 7d | 0d | Maestro Eléctrico - Tablero general BT 400A con protecciones [32 h]; Suministro: Tablero general BT 400A con protecciones [1] | 11,769,300 |
| F401 |  | Tablero de alumbrado y tomacorrientes | 5d | 2026-12-22 | 2026-12-29 | F400 | 7d | 0d | Maestro Eléctrico - Tablero de alumbrado y tomacorrientes [48 h]; Suministro: Tablero de alumbrado y tomacorrientes [1] | 7,477,200 |
| F402 |  | Tablero de fuerza motores | 5d | 2026-12-22 | 2026-12-29 | F400 | 7d | 0d | Maestro Eléctrico - Tablero de fuerza motores [24 h]; Suministro: Tablero de fuerza motores [1] | 3,461,500 |
|  | 2 | **Instalaciones Eléctricas - Canalizaciones** |  | 2026-12-04 | 2026-12-22 |  |  |  |  |  |
| F403 |  | Canalización conduit EMT 3" para circuito principal | 5d | 2026-12-04 | 2026-12-10 | F314 | 23d | 8d | Maestro Eléctrico - Canalización conduit EMT 3" para circuito principal [40 h]; Suministro: Canalización conduit EMT 3" para circuito principal [1] | 2,440,000 |
| F404 |  | Canalización conduit EMT 1" alumbrado | 5d | 2026-12-10 | 2026-12-16 | F315 | 14d | 0d | Maestro Eléctrico - Canalización conduit EMT 1" alumbrado [120 h]; Suministro: Canalización conduit EMT 1" alumbrado [1] | 7,080,000 |
| F405 |  | Canalización conduit EMT 1/2" tomacorrientes | 5d | 2026-12-16 | 2026-12-22 | F316 | 18d | 0d | Maestro Eléctrico - Canalización conduit EMT 1/2" tomacorrientes [60 h]; Suministro: Canalización conduit EMT 1/2" tomacorrientes [1] | 3,600,000 |
|  | 3 | **Instalaciones Eléctricas - Cableado** |  | 2026-12-16 | 2027-01-08 |  |  |  |  |  |
| F408 |  | Cable XLPE 3x2.5mm² alumbrado | 5d | 2026-12-16 | 2026-12-23 | F404 | 14d | 6d | Maestro Eléctrico - Cable XLPE 3x2.5mm² alumbrado [120 h]; Suministro: Cable XLPE 3x2.5mm² alumbrado [1] | 5,760,000 |
| F406 |  | Cable poder 4x16mm² (alimentador principal) | 5d | 2026-12-22 | 2026-12-29 | F403, F400 | 15d | 8d | Maestro Eléctrico - Cable poder 4x16mm² (alimentador principal) [30 h]; Suministro: Cable poder 4x16mm² (alimentador principal) [1] | 2,500,000 |
| F407 |  | Cable XLPE 4x6mm² circuitos secundarios | 8d | 2026-12-29 | 2027-01-08 | F401, F400, F402 | 7d | 0d | Maestro Eléctrico - Cable XLPE 4x6mm² circuitos secundarios [120 h]; Suministro: Cable XLPE 4x6mm² circuitos secundarios [1] | 9,440,000 |

| ID | WBS | Activity | Duration | Start | Finish | Predecessors | Total float | Free float | Resources | Cost |
| --- | --- | --- | --- | --- | --- | --- | --- | --- | --- | --- |
|  | 4 | **Instalaciones Eléctricas - Iluminación** |  | 2026-12-31 | 2027-01-15 |  |  |  |  |  |
| F410 |  | Luminaria LED fluorescente 2x36W oficinas | 5d | 2026-12-31 | 2027-01-07 | F408, F416, F412 | 40d | 6d | Maestro Eléctrico - Luminaria LED fluorescente 2x36W oficinas [12 h]; Suministro: Luminaria LED fluorescente 2x36W oficinas [1] | 720,800 |
| F409 |  | Luminaria LED industrial highbay 200W UFO | 5d | 2027-01-01 | 2027-01-08 | F408, F440 | 7d | 0d | Maestro Eléctrico - Luminaria LED industrial highbay 200W UFO [80 h]; Suministro: Luminaria LED industrial highbay 200W UFO [1] | 10,244,000 |
| F411 |  | Luminaria exterior LED 150W con poste | 5d | 2027-01-08 | 2027-01-15 | F407 | 34d | 0d | Maestro Eléctrico - Luminaria exterior LED 150W con poste [18 h]; Suministro: Luminaria exterior LED 150W con poste [1] | 2,658,600 |
|  | 5 | **Instalaciones Eléctricas - Accesorios** |  | 2026-12-22 | 2026-12-31 |  |  |  |  |  |
| F412 |  | Interruptores, tomacorrientes y accesorios | 7d | 2026-12-22 | 2026-12-31 | F405 | 40d | 0d | Maestro Eléctrico - Interruptores, tomacorrientes y accesorios [24 h]; Suministro: Interruptores, tomacorrientes y accesorios [1] | 3,877,000 |
|  | 6 | **Instalaciones Eléctricas - Puesta a Tierra** |  | 2026-12-04 | 2026-12-17 |  |  |  |  |  |
| F413 |  | Sistema de puesta a tierra (red malla) | 7d | 2026-12-04 | 2026-12-15 | F314 | 23d | 0d | Maestro Eléctrico - Sistema de puesta a tierra (red malla) [40 h]; Suministro: Sistema de puesta a tierra (red malla) [1] | 4,846,100 |
| F414 |  | Medición de resistencia de tierra (<5O) | 3d | 2026-12-15 | 2026-12-17 | F413 | 23d | 16d | Inspector Eléctrico (SEC) - Medición de resistencia de tierra (<5?) [4 h]; Suministro: Medición de resistencia de tierra (<5?) [1]; Telurímetro - Medición de resistencia de tierra (<5?) [1 h] | 484,700 |
|  | 7 | **Instalaciones Eléctricas - Respaldo** |  | 2026-11-04 | 2027-01-14 |  |  |  |  |  |
| F416 |  | Generador de emergencia 50KVA (arriendo) | 5d | 2026-11-04 | 2026-11-11 | F313 | 77d | 37d | Maestro Eléctrico - Generador de emergencia 50KVA (arriendo) [8 h]; Suministro: Generador de emergencia 50KVA (arriendo) [1]; Generador 50KVA (arriendo) - Generador de emergencia 50KVA (arriendo) [1 h] | 3,877,000 |
| F415 |  | Sistema UPS oficina administración 3KVA | 4d | 2027-01-08 | 2027-01-14 | F407 | 35d | 1d | Maestro Eléctrico - Sistema UPS oficina administración 3KVA [8 h]; Suministro: Sistema UPS oficina administración 3KVA [1]; Equipos y herramientas menores - Sistema UPS oficina administración 3KVA [1 h] | 1,661,500 |
|  | 8 | **Instalaciones Eléctricas - Recepción SEC** |  | 2027-01-08 | 2027-01-15 |  |  |  |  |  |
| F417 |  | Revisión SEC y emisión informe | 5d | 2027-01-08 | 2027-01-15 | F406, F407, F408, F409, F414 | 7d | 0d | Inspector Eléctrico (SEC) - Revisión SEC y emisión informe [16 h]; Suministro: Revisión SEC y emisión informe [1] | 1,176,900 |
|  | 9 | **Instalaciones Sanitarias - Agua Potable** |  | 2026-11-02 | 2026-12-22 |  |  |  |  |  |
| F418 |  | Red AP enterrada PVC PN10 ø63mm | 5d | 2026-11-02 | 2026-11-06 | F208 | 45d | 0d | Maestro Gasfíter / Sanitario - Red AP enterrada PVC PN10 ø63mm [30 h]; Suministro: Red AP enterrada PVC PN10 ø63mm [1] | 1,500,000 |
| F419 |  | Red AP interior PVC PN10 ø25mm | 5d | 2026-12-16 | 2026-12-22 | F226 | 52d | 30d | Maestro Gasfíter / Sanitario - Red AP interior PVC PN10 ø25mm [12 h]; Suministro: Red AP interior PVC PN10 ø25mm [1] | 472,000 |
|  | 10 | **Instalaciones Sanitarias - Artefactos** |  | 2027-01-04 | 2027-01-11 |  |  |  |  |  |
| F420 |  | Artefactos sanitarios (WC+lavamanos+urinario) | 5d | 2027-01-04 | 2027-01-11 | F427 | 12d | 0d | Maestro Gasfíter / Sanitario - Artefactos sanitarios (WC+lavamanos+urinario) [32 h]; Suministro: Artefactos sanitarios (WC+lavamanos+urinario) [1] | 3,877,000 |
| F421 |  | Instalación duchas SSHH personal | 5d | 2027-01-04 | 2027-01-11 | F427 | 12d | 0d | Maestro Gasfíter / Sanitario - Instalación duchas SSHH personal [24 h]; Suministro: Instalación duchas SSHH personal [1] | 2,104,800 |
|  | 11 | **Instalaciones Sanitarias - Alcantarillado** |  | 2026-11-02 | 2026-12-29 |  |  |  |  |  |
| F423 |  | Red alcantarillado exterior PVC ø160mm | 5d | 2026-11-02 | 2026-11-06 | F208 | 62d | 0d | Maestro Gasfíter / Sanitario - Red alcantarillado exterior PVC ø160mm [48 h]; Suministro: Red alcantarillado exterior PVC ø160mm [1] | 2,328,000 |
| F424 |  | Cámara de inspección aguas servidas | 4d | 2026-11-06 | 2026-11-12 | F423 | 62d | 55d | Maestro Gasfíter / Sanitario - Cámara de inspección aguas servidas [32 h]; Suministro: Cámara de inspección aguas servidas [1] | 1,329,200 |
| F425 |  | Trampa de grasas | 4d | 2026-11-06 | 2026-11-12 | F423 | 62d | 55d | Maestro Gasfíter / Sanitario - Trampa de grasas [8 h]; Suministro: Trampa de grasas [1] | 1,176,900 |
| F422 |  | Red alcantarillado interior PVC ø110mm | 7d | 2026-12-21 | 2026-12-29 | F436 | 21d | 9d | Maestro Gasfíter / Sanitario - Red alcantarillado interior PVC ø110mm [48 h]; Suministro: Red alcantarillado interior PVC ø110mm [1] | 2,440,000 |

| ID | WBS | Activity | Duration | Start | Finish | Predecessors | Total float | Free float | Resources | Cost |
| --- | --- | --- | --- | --- | --- | --- | --- | --- | --- | --- |
|  | 12 | **Instalaciones Sanitarias - Gas** |  | 2027-01-04 | 2027-01-08 |  |  |  |  |  |
| F426 |  | Instalación calefón 10L gas licuado | 4d | 2027-01-04 | 2027-01-08 | F427 | 13d | 1d | Maestro Gasfíter / Sanitario - Instalación calefón 10L gas licuado [6 h]; Suministro: Instalación calefón 10L gas licuado [1] | 664,600 |
|  | 13 | **Construcción SSHH** |  | 2026-12-21 | 2027-01-04 |  |  |  |  |  |
| F427 |  | Construcción SSHH + caseta prefabricada 15m² | 11d | 2026-12-21 | 2027-01-04 | F436 | 5d | 0d | Maestro Gasfíter / Sanitario - Construcción SSHH + caseta prefabricada 15m² [120 h]; Suministro: Construcción SSHH + caseta prefabricada 15m² [1] | 7,893,000 |
|  | 14 | **Protección Contra Incendios - Red Húmeda** |  | 2026-12-22 | 2027-01-08 |  |  |  |  |  |
| F428 |  | Red húmeda rociadores NFPA-13 ø63mm | 9d | 2026-12-22 | 2027-01-01 | F317 | 13d | 0d | Instalador Protección Contra Incendio - Red húmeda rociadores NFPA-13 ø63mm [320 h]; Suministro: Red húmeda rociadores NFPA-13 ø63mm [1] | 19,400,000 |
| F429 |  | Rociadores automáticos estándar 68°C | 5d | 2027-01-01 | 2027-01-08 | F428 | 13d | 0d | Instalador Protección Contra Incendio - Rociadores automáticos estándar 68°C [80 h]; Suministro: Rociadores automáticos estándar 68°C [1]; Equipo de prueba hidráulica - Rociadores automáticos estándar 68°C [1 h] | 4,208,000 |
|  | 15 | **Protección Contra Incendios - Detección** |  | 2026-12-22 | 2027-01-07 |  |  |  |  |  |
| F430 |  | Central de detección incendio 8 zonas | 4d | 2026-12-22 | 2026-12-28 | F405 | 18d | 0d | Instalador Protección Contra Incendio - Central de detección incendio 8 zonas [16 h]; Suministro: Central de detección incendio 8 zonas [1]; Instrumental de comisionamiento - Central de detección incendio 8 zonas [1 h] | 3,877,000 |
| F433 |  | Pulsadores manuales de alarma | 4d | 2026-12-28 | 2027-01-01 | F430 | 44d | 8d | Instalador Protección Contra Incendio - Pulsadores manuales de alarma [3 h]; Suministro: Pulsadores manuales de alarma [1] | 232,800 |
| F434 |  | Sirenas estroboscópicas de alarma | 4d | 2026-12-28 | 2027-01-01 | F430 | 18d | 5d | Instalador Protección Contra Incendio - Sirenas estroboscópicas de alarma [3 h]; Suministro: Sirenas estroboscópicas de alarma [1] | 540,600 |
| F431 |  | Detectores de humo fotoeléctricos | 4d | 2027-01-01 | 2027-01-07 | F430, F440 | 40d | 4d | Instalador Protección Contra Incendio - Detectores de humo fotoeléctricos [20 h]; Suministro: Detectores de humo fotoeléctricos [1]; Instrumental de comisionamiento - Detectores de humo fotoeléctricos [1 h] | 1,052,000 |
| F432 |  | Detectores temperatura 58°C | 4d | 2027-01-01 | 2027-01-07 | F430, F440 | 40d | 4d | Instalador Protección Contra Incendio - Detectores temperatura 58°C [12 h]; Suministro: Detectores temperatura 58°C [1]; Instrumental de comisionamiento - Detectores temperatura 58°C [1 h] | 531,600 |
|  | 16 | **Protección Contra Incendios - Equipos** |  | 2026-11-06 | 2027-01-07 |  |  |  |  |  |
| F437 |  | Estanque de reserva agua CI 20m³ | 7d | 2026-11-06 | 2026-11-17 | F418 | 45d | 0d | Instalador Protección Contra Incendio - Estanque de reserva agua CI 20m³ [24 h]; Suministro: Estanque de reserva agua CI 20m³ [1] | 6,230,800 |
| F438 |  | Grupo de presión CI motor-bomba 30HP | 7d | 2026-11-17 | 2026-11-26 | F437 | 45d | 32d | Instalador Protección Contra Incendio - Grupo de presión CI motor-bomba 30HP [16 h]; Suministro: Grupo de presión CI motor-bomba 30HP [1]; Equipos y herramientas menores - Grupo de presión CI motor-bomba 30HP [1 h] | 9,000,000 |
| F436 |  | Extintores PQS 12kg ABC | 3d | 2026-12-16 | 2026-12-21 | F226 | 5d | 0d | Instalador Protección Contra Incendio - Extintores PQS 12kg ABC [10 h]; Suministro: Extintores PQS 12kg ABC [1] | 1,052,000 |
| F435 |  | Gabinetes contra incendio 1.5" completos | 4d | 2027-01-01 | 2027-01-07 | F428 | 14d | 1d | Instalador Protección Contra Incendio - Gabinetes contra incendio 1.5" completos [16 h]; Suministro: Gabinetes contra incendio 1.5" completos [1] | 2,104,800 |
|  | 17 | **Protección Contra Incendios - Pruebas** |  | 2027-01-08 | 2027-01-13 |  |  |  |  |  |
| F439 |  | Prueba hidráulica red CI (1.5x presión trabajo) | 3d | 2027-01-08 | 2027-01-13 | F429, F435, F438, F434, F436 | 13d | 0d | Instalador Protección Contra Incendio - Prueba hidráulica red CI (1.5x presión trabajo) [8 h]; Suministro: Prueba hidráulica red CI (1.5x presión trabajo) [1]; Equipo de prueba hidráulica (bomba) - Prueba hidráulica red CI (1.5x presión trabajo) [1 h] | 2,492,400 |
|  | 18 | **Ventilación y Extracción** |  | 2026-12-22 | 2027-01-07 |  |  |  |  |  |
| F443 |  | Rejillas de admisión aire fresco fachada | 5d | 2026-12-22 | 2026-12-29 | F324 | 47d | 25d | Instalador de Ventilación/Climatización - Rejillas de admisión aire fresco fachada [12 h]; Suministro: Rejillas de admisión aire fresco fachada [1] | 1,081,200 |
| F440 |  | Extractor industrial axial 15.000m³/h | 5d | 2026-12-28 | 2027-01-01 | F318 | 7d | 0d | Instalador de Ventilación/Climatización - Extractor industrial axial 15.000m³/h [48 h]; Suministro: Extractor industrial axial 15.000m³/h [1]; Plataforma elevadora / izaje - Extractor industrial axial 15.000m³/h [1 h] | 14,954,400 |
| F441 |  | Ventiladores de inyección 8.000m³/h | 5d | 2026-12-28 | 2027-01-01 | F318 | 17d | 0d | Instalador de Ventilación/Climatización - Ventiladores de inyección 8.000m³/h [24 h]; Suministro: Ventiladores de inyección 8.000m³/h [1]; Plataforma elevadora / izaje - Ventiladores de inyección 8.000m³/h [1 h] | 6,646,000 |
| F442 |  | Ductos metálicos galvanizados ventilación | 5d | 2026-12-28 | 2027-01-01 | F318 | 40d | 0d | Instalador de Ventilación/Climatización - Ductos metálicos galvanizados ventilación [120 h]; Suministro: Ductos metálicos galvanizados ventilación [1] | 5,316,000 |
| F444 |  | Control automático ventilación (termostato) | 4d | 2027-01-01 | 2027-01-07 | F441, F440 | 17d | 10d | Instalador de Ventilación/Climatización - Control automático ventilación (termostato) [8 h]; Suministro: Control automático ventilación (termostato) [1] | 1,176,900 |
| F445 |  | Sistema extracción gases batería carga montacarga | 4d | 2027-01-01 | 2027-01-07 | F442, F418 | 40d | 18d | Instalador de Ventilación/Climatización - Sistema extracción gases batería carga montacarga [16 h]; Suministro: Sistema extracción gases batería carga montacarga [1] | 4,846,100 |

| ID | WBS | Activity | Duration | Start | Finish | Predecessors | Total float | Free float | Resources | Cost |
| --- | --- | --- | --- | --- | --- | --- | --- | --- | --- | --- |
|  | 19 | **Pruebas y Comisionamiento** |  | 2027-01-11 | 2027-01-21 |  |  |  |  |  |
| F447 |  | Pruebas y comisionamiento SSHH | 3d | 2027-01-11 | 2027-01-14 | F420, F421, F422, F426 | 12d | 5d | Maestro Gasfíter / Sanitario - Pruebas y comisionamiento SSHH [16 h]; Suministro: Pruebas y comisionamiento SSHH [1] | 2,076,900 |
| F446 |  | Pruebas y comisionamiento instalaciones EE | 4d | 2027-01-15 | 2027-01-21 | F417 | 7d | 0d | Especialista en Comisionamiento - Pruebas y comisionamiento instalaciones EE [24 h]; Suministro: Pruebas y comisionamiento instalaciones EE [1] | 3,877,000 |
|  | 20 | **Documentación As-Built** |  | 2027-01-21 | 2027-02-02 |  |  |  |  |  |
| F448 |  | Planos as-built instalaciones | 4d | 2027-01-21 | 2027-01-27 | F446, F447, F439, F444 | 7d | 0d | Proyectista (As-Built) - Planos as-built instalaciones [8 h]; Suministro: Planos as-built instalaciones [1] | 1,315,300 |
| F449 |  | Informe final de instalaciones y ensayos | 4d | 2027-01-27 | 2027-02-02 | F448, F424, F425 | 7d | 0d | Proyectista (As-Built) - Informe final de instalaciones y ensayos [8 h]; Suministro: Informe final de instalaciones y ensayos [1] | 1,176,900 |
|  | 5 | **FASE 5: EQUIPAMIENTO INTERIOR Y TERMINACIONES** |  | 2026-12-04 | 2027-02-18 |  |  |  |  |  |
|  | 1 | **Equipamiento de Almacenamiento** |  | 2027-01-28 | 2027-02-09 |  |  |  |  |  |
| F500 |  | Estantería metálica pesada 5 niveles 1000kg/niv | 5d | 2027-01-28 | 2027-02-03 | F241 | 0d |  | Instalador de Estanterías (Racks) - Estantería metálica pesada 5 niveles 1000kg/niv [240 h]; Suministro: Estantería metálica pesada 5 niveles 1000kg/niv [1] | 65,688,000 |
| F502 |  | Estantería para neumáticos y partes largas | 7d | 2027-01-28 | 2027-02-08 | F241 | 3d |  | Instalador de Estanterías (Racks) - Estantería para neumáticos y partes largas [40 h]; Suministro: Estantería para neumáticos y partes largas [1] | 13,000,000 |
| F501 |  | Estantería metálica mediana 3 niveles 500kg/niv | 5d | 2027-02-03 | 2027-02-09 | F241, F505, F507, F508, F515 | 1d |  | Instalador de Estanterías (Racks) - Estantería metálica mediana 3 niveles 500kg/niv [120 h]; Suministro: Estantería metálica mediana 3 niveles 500kg/niv [1] | 34,896,000 |
|  | 2 | **Mobiliario Industrial** |  | 2027-01-08 | 2027-02-03 |  |  |  |  |  |
| F504 |  | Casilleros personal (4 puertas) | 5d | 2027-01-08 | 2027-01-15 | F520 | 14d |  | Cuadrilla Montaje Equipamiento - Casilleros personal (4 puertas) [8 h]; Suministro: Casilleros personal (4 puertas) [1] | 1,751,600 |
| F503 |  | Mesones metálicos de trabajo 200x80cm | 5d | 2027-01-28 | 2027-02-03 | F241 | 5d |  | Cuadrilla Montaje Equipamiento - Mesones metálicos de trabajo 200x80cm [18 h]; Suministro: Mesones metálicos de trabajo 200x80cm [1] | 2,299,200 |
|  | 3 | **Señalética** |  | 2027-01-04 | 2027-02-10 |  |  |  |  |  |
| F507 |  | Señalética de emergencia y evacuación | 5d | 2027-01-04 | 2027-01-11 | F337 | 18d | 17d | Instalador de Señalética - Señalética de emergencia y evacuación [6 h]; Suministro: Señalética de emergencia y evacuación [1] | 494,000 |
| F505 |  | Señalética de seguridad vinilo reflectante | 5d | 2027-01-12 | 2027-01-19 | F337, F338 | 12d | 11d | Instalador de Señalética - Señalética de seguridad vinilo reflectante [18 h]; Suministro: Señalética de seguridad vinilo reflectante [1] | 1,230,000 |
| F508 |  | Pintura de señalética piso (vías tránsito) | 4d | 2027-01-28 | 2027-02-03 | F241 | 1d | 0d | Pintor (Demarcación) - Pintura de señalética piso (vías tránsito) [45 h]; Suministro: Pintura de señalética piso (vías tránsito) [1]; Equipo airless + andamios - Pintura de señalética piso (vías tránsito) [1 h] | 1,740,000 |
| F506 |  | Señalética de almacenamiento y zonas | 5d | 2027-02-04 | 2027-02-10 | F500, F512, F514, F518, F504 | 0d |  | Instalador de Señalética - Señalética de almacenamiento y zonas [10 h]; Suministro: Señalética de almacenamiento y zonas [1] | 656,000 |
|  | 4 | **Sistemas de Seguridad y CCTV** |  | 2027-01-04 | 2027-01-28 |  |  |  |  |  |
| F510 |  | Cámaras CCTV exterior PTZ 4K | 5d | 2027-01-04 | 2027-01-11 | F337 | 10d | 6d | Técnico en Electrónica/CCTV - Cámaras CCTV exterior PTZ 4K [16 h]; Suministro: Cámaras CCTV exterior PTZ 4K [1] | 2,463,200 |
| F509 |  | Cámaras CCTV domo 4K interior | 5d | 2027-01-12 | 2027-01-19 | F338, F405 | 4d | 0d | Técnico en Electrónica/CCTV - Cámaras CCTV domo 4K interior [24 h]; Suministro: Cámaras CCTV domo 4K interior [1] | 3,065,600 |
| F511 |  | DVR 16 canales 4K + disco 8TB | 4d | 2027-01-19 | 2027-01-25 | F509, F510 | 4d | 0d | Técnico en Electrónica/CCTV - DVR 16 canales 4K + disco 8TB [4 h]; Suministro: DVR 16 canales 4K + disco 8TB [1] | 2,463,300 |
| F512 |  | Monitor 55" sala de control | 4d | 2027-01-25 | 2027-01-28 | F511 | 4d |  | Técnico en Electrónica/CCTV - Monitor 55" sala de control [2 h]; Suministro: Monitor 55" sala de control [1] | 656,900 |

| ID | WBS | Activity | Duration | Start | Finish | Predecessors | Total float | Free float | Resources | Cost |
| --- | --- | --- | --- | --- | --- | --- | --- | --- | --- | --- |
|  | 5 | **Sistemas de Control de Acceso** |  | 2026-12-04 | 2027-01-04 |  |  |  |  |  |
| F515 |  | Barrera vehicular automática | 4d | 2026-12-04 | 2026-12-09 | F231 | 41d | 40d | Técnico en Electrónica/Seguridad - Barrera vehicular automática [12 h]; Suministro: Barrera vehicular automática [1] | 3,831,800 |
| F513 |  | Sistema control de acceso biométrico | 5d | 2026-12-22 | 2026-12-29 | F405 | 23d | 0d | Técnico en Electrónica/Seguridad - Sistema control de acceso biométrico [24 h]; Suministro: Sistema control de acceso biométrico [1] | 3,489,600 |
| F514 |  | Torniquete de acceso peatonal | 4d | 2026-12-29 | 2027-01-04 | F513 | 23d |  | Técnico en Electrónica/Seguridad - Torniquete de acceso peatonal [8 h]; Suministro: Torniquete de acceso peatonal [1] | 2,463,300 |
|  | 6 | **Equipamiento de Oficina** |  | 2027-01-14 | 2027-01-28 |  |  |  |  |  |
| F516 |  | Mobiliario oficina bodegaje (escritorios+sillas) | 4d | 2027-01-14 | 2027-01-20 | F522 | 5d | 0d | Cuadrilla Montaje Equipamiento - Mobiliario oficina bodegaje (escritorios+sillas) [8 h]; Suministro: Mobiliario oficina bodegaje (escritorios+sillas) [1] | 3,421,100 |
| F517 |  | Computadores gestión bodega (3 equipos) | 3d | 2027-01-20 | 2027-01-25 | F516, F519 | 5d | 0d | Técnico en Redes/TI - Computadores gestión bodega (3 equipos) [10 h]; Suministro: Computadores gestión bodega (3 equipos) [1] | 3,489,600 |
| F518 |  | Impresora código de barras + lectores | 3d | 2027-01-25 | 2027-01-28 | F517 | 5d |  | Técnico en Redes/TI - Impresora código de barras + lectores [6 h]; Suministro: Impresora código de barras + lectores [1] | 1,313,800 |
|  | 7 | **Redes y Comunicaciones** |  | 2027-01-08 | 2027-01-14 |  |  |  |  |  |
| F519 |  | Instalación sistema WiFi industrial | 4d | 2027-01-08 | 2027-01-14 | F407 | 9d | 4d | Técnico en Redes/TI - Instalación sistema WiFi industrial [12 h]; Suministro: Instalación sistema WiFi industrial [1] | 2,463,300 |
|  | 8 | **Terminaciones SSHH y Oficinas** |  | 2027-01-04 | 2027-01-14 |  |  |  |  |  |
| F520 |  | Pintura interior muros SSHH | 4d | 2027-01-04 | 2027-01-08 | F427 | 5d | 0d | Pintor - Pintura interior muros SSHH [24 h]; Suministro: Pintura interior muros SSHH [1]; Equipo airless + andamios - Pintura interior muros SSHH [1 h] | 712,000 |
| F521 |  | Revestimiento cerámico SSHH | 4d | 2027-01-04 | 2027-01-08 | F427 | 5d | 0d | Maestro Ceramista - Revestimiento cerámico SSHH [48 h]; Suministro: Revestimiento cerámico SSHH [1] | 988,000 |
| F522 |  | Cielo falso planchas yeso-cartón oficinas | 4d | 2027-01-08 | 2027-01-14 | F520, F521 | 5d | 0d | Instalador de Cielos - Cielo falso planchas yeso-cartón oficinas [45 h]; Suministro: Cielo falso planchas yeso-cartón oficinas [1] | 906,000 |
|  | 9 | **Limpieza Final y Retiros** |  | 2027-02-10 | 2027-02-18 |  |  |  |  |  |
| F523 |  | Limpieza general de obra | 3d | 2027-02-10 | 2027-02-15 | F506, F449, F501, F502, F503 | 0d |  | Cuadrilla de Aseo y Cierre - Limpieza general de obra [24 h]; Suministro: Limpieza general de obra [1] | 2,463,300 |
| F524 |  | Retiro de instalaciones de faenas | 3d | 2027-02-16 | 2027-02-18 | F523 | 0d |  | Cuadrilla de Aseo y Cierre - Retiro de instalaciones de faenas [16 h]; Suministro: Retiro de instalaciones de faenas [1] | 2,052,600 |
|  | 6 | **FASE 6: GESTIÓN DE PROYECTO Y CIERRE** |  | 2026-09-07 | 2027-03-03 |  |  |  |  |  |
|  | 1 | **Dirección y Administración de Proyecto** |  | 2026-09-07 | 2027-03-02 |  |  |  |  |  |
| F600 |  | Dirección de proyecto (DP) — mensual | 130d | 2026-09-07 | 2027-03-02 | H00 SS | 1d | 0d | Director de Proyecto - Dirección de proyecto (DP) - mensual [640 h] | 7,680,000 |
| F601 |  | Administración de contratos | 130d | 2026-09-07 | 2027-03-02 | H00 SS | 1d | 0d | Administrador de Contrato - Administración de contratos [320 h] | 3,840,000 |
|  | 2 | **Aseguramiento y Control de Calidad** |  | 2026-09-07 | 2027-03-02 |  |  |  |  |  |
| F602 |  | Gestión de calidad (inspecciones + libros) | 130d | 2026-09-07 | 2027-03-02 | H00 SS | 1d | 0d | Jefe de Calidad (QA/QC) - Gestión de calidad (inspecciones + libros) [320 h] | 3,840,000 |
|  | 3 | **Prevención de Riesgos** |  | 2026-09-07 | 2027-03-02 |  |  |  |  |  |
| F603 |  | Prevención de riesgos en obra | 130d | 2026-09-07 | 2027-03-02 | G01 | 1d | 0d | Experto en Prevención de Riesgos - Prevención de riesgos en obra [704 h] | 7,040,000 |

| ID | WBS | Activity | Duration | Start | Finish | Predecessors | Total float | Free float | Resources | Cost |
| --- | --- | --- | --- | --- | --- | --- | --- | --- | --- | --- |
|  | 4 | **Reportabilidad y Coordinación** |  | 2026-09-07 | 2027-03-02 |  |  |  |  |  |
| F604 |  | Informes de avance mensuales al cliente | 130d | 2026-09-07 | 2027-03-02 | G01 | 1d | 0d | Profesional de Control de Proyecto - Informes de avance mensuales al cliente [32 h]; Suministro: Informes de avance mensuales al cliente [1] | 500,400 |
| F605 |  | Reuniones de coordinación semanal | 130d | 2026-09-07 | 2027-03-02 | G01 | 1d |  | Jefe de Terreno - Reuniones de coordinación semanal [51 h]; Suministro: Reuniones de coordinación semanal [1] | 1,094,800 |
|  | 5 | **Control de Costos** |  | 2026-09-07 | 2027-03-02 |  |  |  |  |  |
| F606 |  | Control de costos y EVM mensual | 130d | 2026-09-07 | 2027-03-02 | G01 | 1d |  | Profesional de Control de Proyecto - Control de costos y EVM mensual [160 h] | 1,920,000 |
|  | 6 | **Recepción y Cierre** |  | 2027-02-18 | 2027-03-03 |  |  |  |  |  |
| F607 |  | Tramitación recepción definitiva DOM | 5d | 2027-02-18 | 2027-02-25 | F524, F449, F344 | 0d |  | Profesional de Cierre - Tramitación recepción definitiva DOM [16 h]; Suministro: Tramitación recepción definitiva DOM [1] | 428,900 |
| F608 |  | Entrega dossier técnico final | 3d | 2027-02-25 | 2027-03-02 | F607 | 0d |  | Profesional de Cierre - Entrega dossier técnico final [25 h]; Suministro: Entrega dossier técnico final [1] | 303,800 |
| F609 |  | Acta de entrega y recepción conforme | 1d | 2027-03-02 | 2027-03-03 | F608, F239, F242 | 0d |  | Profesional de Cierre - Acta de entrega y recepción conforme [8 h]; Suministro: Acta de entrega y recepción conforme [1] | 160,900 |
